# Overall BIDC Transformation Project

Schedule from MS Project XML, 2026-07-01 to 2027-12-20, A marks actual dates.

## Calendars

- Standard: Mon-Fri 08:00-12:00, 13:00-17:00; Sat-Sun off. Exceptions (off unless hours are given): 2026-08-01 08:00-12:00, 13:00-17:00, 2026-08-30 08:00-12:00, 13:00-17:00, 2026-11-15 08:00-12:00, 13:00-17:00, 2027-02-27 to 2027-02-28 08:00-12:00, 13:00-17:00, 2027-04-24 to 2027-04-25 08:00-12:00, 13:00-17:00, 2027-06-12 08:00-12:00, 13:00-17:00, 2027-06-19 to 2027-06-20 08:00-12:00, 13:00-17:00.

## Resources

| Resource |
| --- |
| BIDV |
| BIDC |
| FIS |
| KVB |
| Ranjitha |
| Sushma |
| Tennison |
| Hetagna |
| BIDV-FIS |
| Seema |
| TBD |
| TDC |
| LVB |
| BIDC-FIS |
| FIS support |

## Schedule

| ID | WBS | Task | Type | Duration | Start | Finish | Predecessors | Complete | Remaining | Total slack | Constraint | Resources | Work | Actual work |
| --- | --- | --- | --- | --- | --- | --- | --- | --- | --- | --- | --- | --- | --- | --- |
| 1 | 1 | **Overall BIDC Core Banking Transformation Project Plus Go Live Support** |  | 394d? | 2026-07-01 A | 2027-12-20 |  | 2% | 387.12d? | 0d |  |  | 68962.4h | 6558.21h |
| 2 | 1.1 | **I- BIDC_PROFILE CORE PROJECT PLAN** |  | 394d? | 2026-07-01 A | 2027-12-20 |  | 2% | 387.15d? | 0d |  |  | 51226.4h | 6358.21h |
| 3 | 1.1.1 | **BIDC Profile Core Implementation + Post Go live Support** |  | 394d? | 2026-07-01 A | 2027-12-20 |  | 2% | 387.15d? | 0d |  |  | 51226.4h | 6358.21h |
| 4 | 1.1.1.1 | **1.INITIATION PHASE** |  | 36d | 2026-07-01 A | 2026-08-18 |  | 67% | 11.84d | 0d |  |  | 1464h | 1019.2h |
| 5 | 1.1.1.1.1 | Resource Mobilization and briefing | manual | 14d | 2026-07-01 A | 2026-07-20 A |  | 100% |  |  | start no earlier than 2026-07-01 | BIDC; FIS; BIDV | 336h | 336h |
| 6 | 1.1.1.1.2 | Project Definition | manual | 11.5d | 2026-07-01 A | 2026-07-16 A | 5FS-27900emin | 100% |  |  | start no earlier than 2026-07-01 | BIDC; FIS | 184h | 184h |
| 7 | 1.1.1.1.3 | Implementation Approach and Stategy (included in PDD) | manual | 34d | 2026-07-01 A | 2026-08-14 | 5FS-27900emin | 55% | 15.3d |  | start no earlier than 2026-07-01 | BIDC; FIS | 544h | 299.2h |
| 8 | 1.1.1.1.4 | Traning/Walkthrough Environment setup | manual | 24d | 2026-07-15 A | 2026-08-14 | 7SS+20160emin | 50% | 12d |  | start no earlier than 2026-07-15 | BIDC; FIS | 384h | 192h |
| 9 | 1.1.1.1.5 | Project Kick off Meeting | manual | 1d | 2026-08-18 A | 2026-08-18 | 5FS+15300emin | 50% | 0.5d |  | start no earlier than 2026-08-18 | BIDC; FIS | 16h | 8h |
| 10 | 1.1.1.2 | **2.REQUIREMENT ANALYSIS PHASE** |  | 57d | 2026-07-01 A | 2026-09-15 |  | 33% | 38.3d | 0d |  |  | 2680h | 879.2h |
| 11 | 1.1.1.2.1 | Customer | manual | 45d | 2026-07-01 A | 2026-08-30 |  | 20% | 36d |  | start no earlier than 2026-07-01 | BIDV | 360h | 72h |
| 12 | 1.1.1.2.2 | Deposit | manual | 43d | 2026-07-01 A | 2026-08-30 |  | 25% | 32.25d |  | start no earlier than 2026-07-01 | BIDV | 344h | 86h |
| 13 | 1.1.1.2.3 | Loan | manual | 43d | 2026-07-01 A | 2026-08-30 | 12SS | 30% | 30.1d |  | start no earlier than 2026-07-01 | BIDV | 344h | 103.2h |
| 14 | 1.1.1.2.4 | Remittance | manual | 57d | 2026-07-01 A | 2026-09-15 | 13SS+2880emin | 30% | 39.9d |  | start no earlier than 2026-07-01 | BIDV | 456h | 136.8h |
| 15 | 1.1.1.2.5 | Teller | manual | 45d | 2026-07-01 A | 2026-08-30 | 14SS | 25% | 33.75d |  | start no earlier than 2026-07-01 | BIDV | 360h | 90h |
| 16 | 1.1.1.2.6 | GL | manual | 57d | 2026-07-01 A | 2026-09-15 | 15SS | 70% | 17.1d |  | start no earlier than 2026-07-01 | BIDV | 456h | 319.2h |
| 17 | 1.1.1.2.7 | General | manual | 45d | 2026-07-01 A | 2026-08-30 | 16SS | 20% | 36d |  | start no earlier than 2026-07-01 | BIDV | 360h | 72h |
| 18 | 1.1.1.3 | **3.CONFIGURATION** |  | 53d | 2026-07-22 | 2026-09-30 |  |  |  | 0d |  | BIDV | 3072h |  |
| 19 | 1.1.1.3.1 | Deposit | manual | 45d | 2026-08-01 | 2026-09-30 |  |  |  |  | start no earlier than 2026-08-01 | BIDV | 360h |  |
| 20 | 1.1.1.3.2 | Customer | manual | 50d | 2026-07-24 | 2026-09-30 |  |  |  |  | start no earlier than 2026-07-24 | BIDV | 400h |  |
| 21 | 1.1.1.3.3 | Loan | manual | 45d | 2026-08-01 | 2026-09-30 | 20SS+14400emin |  |  |  | start no earlier than 2026-08-01 | BIDV | 360h |  |
| 22 | 1.1.1.3.4 | Remittance | manual | 45d | 2026-08-01 | 2026-09-30 | 21SS |  |  |  | start no earlier than 2026-08-01 | BIDV | 360h |  |
| 23 | 1.1.1.3.5 | Teller | manual | 53d | 2026-07-22 | 2026-09-30 | 20SS |  |  |  | start no earlier than 2026-07-22 | BIDV | 424h |  |
| 24 | 1.1.1.3.6 | GL | manual | 51d | 2026-07-24 | 2026-09-30 | 23SS+2880emin |  |  |  | start no earlier than 2026-07-24 | BIDV | 408h |  |
| 25 | 1.1.1.3.7 | General Parameter System (Userclass, Contexts, Permission..) | manual | 45d | 2026-08-01 | 2026-09-30 | 24SS+11520emin |  |  |  | start no earlier than 2026-08-01 | BIDV | 360h |  |
| 26 | 1.1.1.3.8 | TF | manual | 1d? | 2026-07-22 | 2026-07-22 |  |  |  |  |  |  |  |  |

Notes:
- 5: Comments: TH&QA
- 6: Comments: TH&QA
- 7: Comments: TH&QA
- 8: Comments: QTUDCB
- 9: Comments: TH&QA
- 11: Comments: CIF: Tungtd1
- 12: Comments: DEP: giang_lth
- 13: Comments: LN:dungvt6
- 14: Comments: RM:trangnta
- 15: Comments: Giaptq
- 16: Comments: hoavtt
- 19: Comments: CIF: Tungtd1
- 20: Comments: DEP: giang_lth
- 21: Comments: LN:dungvt6
- 22: Comments: RM:trangnta
- 23: Comments: Giaptq
- 24: Comments: hoavtt
- 26: Comments: Tiến Đức check lại thông tin để bổ sung Configure cho TF ( để chung hay tách riêng với Configuration)

| ID | WBS | Task | Type | Duration | Start | Finish | Predecessors | Complete | Remaining | Total slack | Constraint | Resources | Work | Actual work | Comments |
| --- | --- | --- | --- | --- | --- | --- | --- | --- | --- | --- | --- | --- | --- | --- | --- |
| 27 | 1.1.1.4 | **4.DESIGN & DEVELOPMENT PHASE (Customize PRF Function Dev)** |  | 153d | 2026-07-21 | 2027-02-15 |  |  |  | 0d |  |  | 1552h |  |  |
| 28 | 1.1.1.4.1 | Technical and Solution Architecture Workstream | manual | 64d | 2026-08-01 | 2026-10-30 |  |  |  |  | start no earlier than 2026-08-01 | BIDC | 512h |  |  |
| 29 | 1.1.1.4.2 | Customize Core (CIF, DEP, LN, TL, GL, RM) Function Dev | manual | 130d | 2026-08-17 | 2027-02-15 | 28SS+23040emin |  |  |  | start no earlier than 2026-08-17 | BIDC | 1040h |  |  |
| 30 | 1.1.1.4.3 | Customize Core (TF) | milestone, manual | 0d | 2026-07-21 | 2026-07-21 | 6FS+6960emin |  |  |  | start no earlier than 2026-07-21 |  |  |  | TDC |
| 31 | 1.1.1.5 | **5.INTEGRATION** |  | 212d? | 2026-07-01 A | 2027-04-15 |  | 1% | 210.29d? | 0d |  |  | 23720h | 2767.7h |  |
| 32 | 1.1.1.5.1 | **1.SQUAD DEP 3** |  | 202d | 2026-07-15 A | 2027-04-15 |  | 1% | 199.97d | 0d |  | BIDC | 3688h | 747.05h | Giang_lth |
| 33 | 1.1.1.5.1.1 | **Internet Banking (BIDV Direct- BIDC Zbank Business)** |  | 202d | 2026-07-15 A | 2027-04-15 |  | 1% | 199.97d | 0d |  | BIDC | 2088h | 44.25h | Giang_lth |
| 34 | 1.1.1.5.1.1.1 | Workshop GAP analysis | manual | 35d | 2026-07-15 A | 2026-08-30 |  | 10% | 31.5d |  | start no earlier than 2026-07-15 | BIDC | 280h | 28h |  |
| 35 | 1.1.1.5.1.1.2 | Building URD | manual | 24d | 2026-08-15 | 2026-09-15 | 34SS+44640emin |  |  |  | start no earlier than 2026-08-15 | BIDC | 192h |  |  |
| 36 | 1.1.1.5.1.1.3 | RSD &Development | manual | 112d | 2026-09-01 | 2027-01-30 | 35SS+24480emin |  |  |  | start no earlier than 2026-09-01 |  |  |  |  |
| 37 | 1.1.1.5.1.1.4 | SIT | manual | 78d | 2026-11-01 | 2027-02-15 | 36SS+87840emin |  |  |  | start no earlier than 2026-11-01 |  |  |  |  |
| 38 | 1.1.1.5.1.1.5 | UAT | manual | 100d | 2026-12-01 | 2027-04-15 | 37SS+43200emin |  |  |  | start no earlier than 2026-12-01 |  |  |  |  |
| 39 | 1.1.1.5.2 | **2.SQUAD DEP 1** |  | 202d | 2026-07-01 A | 2027-04-15 |  | 1% | 209.74d |  |  | BIDC | 1680h | 450.71h | Giang_lth |
| 40 | 1.1.1.5.2.1 | **Mobile Banking (KHCN)** |  | 202d | 2026-07-15 A | 2027-04-15 |  | 1% | 200.59d | 0d |  |  |  |  | Giang_lth |
| 41 | 1.1.1.5.2.1.1 | Workshop GAP analysis | manual | 24d | 2026-07-15 A | 2026-08-14 |  | 10% | 21.6d |  | start no earlier than 2026-07-15 |  |  |  |  |
| 42 | 1.1.1.5.2.1.2 | Building URD | manual | 22d | 2026-08-01 | 2026-08-30 | 41SS+24480emin |  |  |  | start no earlier than 2026-08-01 |  |  |  |  |
| 43 | 1.1.1.5.2.1.3 | RSD &Development | manual | 88d | 2026-09-01 | 2026-12-30 | 42FS+2340emin |  |  |  | start no earlier than 2026-09-01 |  |  |  |  |
| 44 | 1.1.1.5.2.1.4 | SIT | manual | 90d | 2026-10-01 | 2027-01-30 | 43SS+43200emin |  |  |  | start no earlier than 2026-10-01 |  |  |  |  |
| 45 | 1.1.1.5.2.1.5 | UAT | manual | 122d | 2026-11-02 | 2027-04-15 | 44SS+46080emin |  |  |  | start no earlier than 2026-11-02 |  |  |  |  |
| 46 | 1.1.1.5.2.2 | **BLS** |  | 202d | 2026-07-15 A | 2027-04-15 |  | 1% | 200.59d | 0d |  |  |  |  | Giang_lth |
| 47 | 1.1.1.5.2.2.1 | Workshop GAP analysis | manual | 24d | 2026-07-15 A | 2026-08-14 |  | 10% | 21.6d |  | start no earlier than 2026-07-15 |  |  |  |  |
| 48 | 1.1.1.5.2.2.2 | Building URD | manual | 22d | 2026-08-01 | 2026-08-30 | 47SS+24480emin |  |  |  | start no earlier than 2026-08-01 |  |  |  |  |
| 49 | 1.1.1.5.2.2.3 | RSD &Development | manual | 88d | 2026-09-01 | 2026-12-30 | 48FS+2340emin |  |  |  | start no earlier than 2026-09-01 |  |  |  |  |
| 50 | 1.1.1.5.2.2.4 | SIT | manual | 90d | 2026-10-01 | 2027-01-30 | 49SS+43200emin |  |  |  | start no earlier than 2026-10-01 |  |  |  |  |
| 51 | 1.1.1.5.2.2.5 | UAT | manual | 122d | 2026-11-02 | 2027-04-15 | 50SS+46080emin |  |  |  | start no earlier than 2026-11-02 |  |  |  |  |

| ID | WBS | Task | Type | Duration | Start | Finish | Predecessors | Complete | Remaining | Total slack | Constraint | Resources | Work | Actual work | Comments |
| --- | --- | --- | --- | --- | --- | --- | --- | --- | --- | --- | --- | --- | --- | --- | --- |
| 52 | 1.1.1.5.2.3 | **Saving Award/Chương trình cấp mã tiết kiệm dự thưởng** |  | 202d | 2026-07-15 A | 2027-04-15 |  | 2% | 197.62d | 0d |  |  |  |  | Giang_lth |
| 53 | 1.1.1.5.2.3.1 | Workshop GAP analysis | manual | 26d | 2026-07-15 A | 2026-08-15 |  | 30% | 17.5d |  | start no earlier than 2026-07-15 |  |  |  |  |
| 54 | 1.1.1.5.2.3.2 | Building URD | manual | 22d | 2026-08-01 | 2026-08-30 | 53SS+24480emin |  |  |  | start no earlier than 2026-08-01 |  |  |  |  |
| 55 | 1.1.1.5.2.3.3 | RSD &Development | manual | 88d | 2026-09-01 | 2026-12-30 | 54FS+2340emin |  |  |  | start no earlier than 2026-09-01 |  |  |  |  |
| 56 | 1.1.1.5.2.3.4 | SIT | manual | 90d | 2026-10-01 | 2027-01-30 | 55SS+43200emin |  |  |  | start no earlier than 2026-10-01 |  |  |  |  |
| 57 | 1.1.1.5.2.3.5 | UAT | manual | 122d | 2026-11-02 | 2027-04-15 | 56SS+46080emin |  |  |  | start no earlier than 2026-11-02 |  |  |  |  |
| 58 | 1.1.1.5.2.4 | **Onsite Sale Asistance (OSA)** |  | 202d | 2026-07-15 A | 2027-04-15 |  | 1% | 200.59d | 0d |  |  |  |  | Giang_lth |
| 59 | 1.1.1.5.2.4.1 | Workshop GAP analysis | manual | 24d | 2026-07-15 A | 2026-08-14 |  | 10% | 21.6d |  | start no earlier than 2026-07-15 |  |  |  |  |
| 60 | 1.1.1.5.2.4.2 | Building URD | manual | 22d | 2026-08-01 | 2026-08-30 | 59SS+24480emin |  |  |  | start no earlier than 2026-08-01 |  |  |  |  |
| 61 | 1.1.1.5.2.4.3 | RSD &Development | manual | 88d | 2026-09-01 | 2026-12-30 | 60FS+2340emin |  |  |  | start no earlier than 2026-09-01 |  |  |  |  |
| 62 | 1.1.1.5.2.4.4 | SIT | manual | 90d | 2026-10-01 | 2027-01-30 | 61SS+43200emin |  |  |  | start no earlier than 2026-10-01 |  |  |  |  |
| 63 | 1.1.1.5.2.4.5 | UAT | manual | 122d | 2026-11-02 | 2027-04-15 | 62SS+46080emin |  |  |  | start no earlier than 2026-11-02 |  |  |  |  |
| 64 | 1.1.1.5.3 | **3. Squad_DEP 2** |  | 202d | 2026-07-15 A | 2027-04-15 |  | 1% | 200.54d | 0d |  | BIDC | 1496h | 60.95h | Giang_lth |
| 65 | 1.1.1.5.3.1 | **BIDV Notification** |  | 202d | 2026-07-15 A | 2027-04-15 |  | 1% | 200.54d | 0d |  |  |  |  | Giang_lth |
| 66 | 1.1.1.5.3.1.1 | Workshop GAP analysis | manual | 26d | 2026-07-15 A | 2026-08-15 |  | 10% | 22.5d |  | start no earlier than 2026-07-15 |  |  |  |  |
| 67 | 1.1.1.5.3.1.2 | Building URD | manual | 22d | 2026-08-01 | 2026-08-30 | 66SS+24480emin |  |  |  | start no earlier than 2026-08-01 |  |  |  |  |
| 68 | 1.1.1.5.3.1.3 | RSD &Development | manual | 88d | 2026-09-01 | 2026-12-30 | 67FS+2340emin |  |  |  | start no earlier than 2026-09-01 |  |  |  |  |
| 69 | 1.1.1.5.3.1.4 | SIT | manual | 90d | 2026-10-01 | 2027-01-30 | 68SS+43200emin |  |  |  | start no earlier than 2026-10-01 |  |  |  |  |
| 70 | 1.1.1.5.3.1.5 | UAT | manual | 122d | 2026-11-02 | 2027-04-15 | 69SS+46080emin |  |  |  | start no earlier than 2026-11-02 |  |  |  |  |
| 71 | 1.1.1.5.4 | **4. Squad_CIF** |  | 212d? | 2026-07-01 A | 2027-04-15 |  |  | 211.15d? | 0d |  | BIDC | 1496h | 60.95h | Tungtd1 |
| 72 | 1.1.1.5.4.1 | **BIDC eKYC** |  | 199d | 2026-07-20 A | 2027-04-15 |  |  | 198.21d | 0d |  |  |  |  | Tungtd1 |
| 73 | 1.1.1.5.4.1.1 | Workshop GAP analysis | manual | 32d | 2026-07-20 A | 2026-08-30 |  | 5% | 30.4d |  | start no earlier than 2026-07-20 |  |  |  |  |
| 74 | 1.1.1.5.4.1.2 | Building URD | manual | 34d | 2026-08-01 | 2026-09-15 | 73SS+17280emin |  |  |  | start no earlier than 2026-08-01 |  |  |  |  |
| 75 | 1.1.1.5.4.1.3 | RSD &Development | manual | 111d | 2026-09-15 | 2027-02-15 | 74SS+64800emin |  |  |  | start no earlier than 2026-09-15 |  |  |  |  |
| 76 | 1.1.1.5.4.1.4 | SIT | manual | 113d | 2026-10-19 | 2027-03-19 | 75SS+48960emin |  |  |  | start no earlier than 2026-10-19 |  |  |  |  |
| 77 | 1.1.1.5.4.1.5 | UAT | manual | 112d | 2026-11-15 | 2027-04-15 | 76SS+38880emin |  |  |  | start no earlier than 2026-11-15 |  |  |  |  |

| ID | WBS | Task | Type | Duration | Start | Finish | Predecessors | Complete | Remaining | Actual start | Total slack | Constraint | Resources | Work | Actual work | Comments |
| --- | --- | --- | --- | --- | --- | --- | --- | --- | --- | --- | --- | --- | --- | --- | --- | --- |
| 78 | 1.1.1.5.4.2 | **Quản lý rủi do khách hàng (RMS)** |  | 212d? | 2026-07-01 A | 2027-04-15 |  |  | 211.15d? |  | 0d |  |  |  |  | Tungtd1 |
| 79 | 1.1.1.5.4.2.1 | Workshop GAP analysis | manual | 32d | 2026-07-20 A | 2026-08-30 |  | 5% | 30.4d |  |  | start no earlier than 2026-07-20 |  |  |  |  |
| 80 | 1.1.1.5.4.2.2 | Building URD | manual | 33d | 2026-08-03 | 2026-09-15 | 79SS+20160emin |  |  |  |  | start no earlier than 2026-08-03 |  |  |  |  |
| 81 | 1.1.1.5.4.2.3 | RSD &Development | manual | 110d | 2026-09-16 | 2027-02-15 | 80FS+900emin |  |  |  |  | start no earlier than 2026-09-16 |  |  |  |  |
| 82 | 1.1.1.5.4.2.4 | SIT | manual | 113d | 2026-10-19 | 2027-03-19 | 81SS+47520emin |  |  |  |  | start no earlier than 2026-10-19 |  |  |  |  |
| 83 | 1.1.1.5.4.2.5 | UAT | manual | 111d | 2026-11-16 | 2027-04-15 | 82SS+40320emin |  |  |  |  | start no earlier than 2026-11-16 |  |  |  |  |
| 84 | 1.1.1.5.4.2.6 | **B.SVS Hải ngoại** |  | 199d | 2026-07-01 | 2027-04-15 | 72FS-415260emin |  | 211.15d | 2026-07-20 |  |  |  |  |  | Tungtd1 |
| 85 | 1.1.1.5.4.2.6.1 | Workshop GAP analysis | manual | 32d | 2026-07-20 A | 2026-08-30 |  | 5% | 30.4d |  |  | start no earlier than 2026-07-20 |  |  |  |  |
| 86 | 1.1.1.5.4.2.6.2 | Building URD | manual | 33d | 2026-08-03 | 2026-09-15 | 85SS+20160emin |  |  |  |  | start no earlier than 2026-08-03 |  |  |  |  |
| 87 | 1.1.1.5.4.2.6.3 | RSD &Development | manual | 111d | 2026-09-15 | 2027-02-15 | 86SS+61920emin |  |  |  |  | start no earlier than 2026-09-15 |  |  |  |  |
| 88 | 1.1.1.5.4.2.6.4 | SIT | manual | 113d | 2026-10-19 | 2027-03-19 | 87SS+48960emin |  |  |  |  | start no earlier than 2026-10-19 |  |  |  |  |
| 89 | 1.1.1.5.4.2.6.5 | UAT | manual | 111d | 2026-11-16 | 2027-04-15 | 88SS+40320emin |  |  |  |  | start no earlier than 2026-11-16 |  |  |  |  |
| 90 | 1.1.1.5.4.2.7 | **Compliance Management System ( CAM_DX)** |  | 197d | 2026-07-22 A | 2027-04-15 | 72FS-415260emin |  | 196.21d |  | 0d |  |  |  |  | Tungtd1 |
| 91 | 1.1.1.5.4.2.7.1 | Workshop GAP analysis | manual | 32d | 2026-07-22 A | 2026-09-01 |  | 5% | 30.4d |  |  | start no earlier than 2026-07-22 |  |  |  |  |
| 92 | 1.1.1.5.4.2.7.2 | Building URD | manual | 33d | 2026-08-03 | 2026-09-15 | 91SS+20160emin |  |  |  |  | start no earlier than 2026-08-03 |  |  |  |  |
| 93 | 1.1.1.5.4.2.7.3 | RSD &Development | manual | 111d | 2026-09-15 | 2027-02-15 | 92SS+61920emin |  |  |  |  | start no earlier than 2026-09-15 |  |  |  |  |
| 94 | 1.1.1.5.4.2.7.4 | SIT | manual | 113d | 2026-10-19 | 2027-03-19 | 93SS+48960emin |  |  |  |  | start no earlier than 2026-10-19 |  |  |  |  |
| 95 | 1.1.1.5.4.2.7.5 | UAT | manual | 111d | 2026-11-16 | 2027-04-15 | 94SS+40320emin |  |  |  |  | start no earlier than 2026-11-16 |  |  |  |  |
| 96 | 1.1.1.5.5 | **5. Squad_ESB** |  | 199d | 2026-07-20 A | 2027-04-15 | 78FS-387900emin, 84FS-387900emin, 90FS-387900emin | 1% | 197.8d |  | 0d |  | BIDC | 1568h | 460.04h | Khoihm |
| 97 | 1.1.1.5.5.1 | **DBS-API** |  | 199d | 2026-07-20 A | 2027-04-15 |  | 1% | 197.8d |  | 0d |  |  |  |  |  |
| 98 | 1.1.1.5.5.1.1 | Workshop GAP analysis | manual | 31d | 2026-07-20 A | 2026-08-28 |  | 5% | 29.45d |  |  | start no earlier than 2026-07-20 |  |  |  | trao đổi lại kế hoạch với BIDC |
| 99 | 1.1.1.5.5.1.2 | TLKT & development | manual | 55d | 2026-08-03 | 2026-10-15 | 98SS+20160emin |  |  |  |  | start no earlier than 2026-08-03 |  |  |  |  |
| 100 | 1.1.1.5.5.1.3 | SIT | manual | 103d | 2026-11-02 | 2027-03-19 | 99FS+25380emin |  |  |  |  | start no earlier than 2026-11-02 |  |  |  |  |
| 101 | 1.1.1.5.5.1.4 | UAT | manual | 67d | 2027-01-15 | 2027-04-15 | 100SS+106560emin |  |  |  |  | start no earlier than 2027-01-15 |  |  |  |  |

| ID | WBS | Task | Type | Duration | Start | Finish | Predecessors | Complete | Remaining | Total slack | Constraint | Resources | Work | Actual work |
| --- | --- | --- | --- | --- | --- | --- | --- | --- | --- | --- | --- | --- | --- | --- |
| 102 | 1.1.1.5.5.2 | **Enterprise Service Bus (ESB)** |  | 199d | 2026-07-20 A | 2027-04-15 |  | 1% | 197.8d | 0d |  |  |  |  |
| 103 | 1.1.1.5.5.2.1 | Workshop GAP analysis | manual | 31d | 2026-07-20 A | 2026-08-28 |  | 5% | 29.45d |  | start no earlier than 2026-07-20 |  |  |  |
| 104 | 1.1.1.5.5.2.2 | TLKT & development | manual | 55d | 2026-08-03 | 2026-10-15 | 103SS+20160emin |  |  |  | start no earlier than 2026-08-03 |  |  |  |
| 105 | 1.1.1.5.5.2.3 | SIT | manual | 103d | 2026-11-02 | 2027-03-19 | 104FS+25380emin |  |  |  | start no earlier than 2026-11-02 |  |  |  |
| 106 | 1.1.1.5.5.2.4 | UAT | manual | 67d | 2027-01-15 | 2027-04-15 | 105SS+106560emin |  |  |  | start no earlier than 2027-01-15 |  |  |  |
| 107 | 1.1.1.5.6 | **6. Squad RM_CTLNH** |  | 195d | 2026-07-24 A | 2027-04-15 |  |  | 195d | 0d |  | BIDC | 1512h | 335.94h |
| 108 | 1.1.1.5.6.1 | **NBC_Openbanking** |  | 195d | 2026-07-24 | 2027-04-15 |  |  |  | 0d |  |  |  |  |
| 109 | 1.1.1.5.6.1.1 | Workshop GAP analysis | manual | 29d | 2026-07-24 | 2026-08-31 |  |  |  |  | start no earlier than 2026-07-24 |  |  |  |
| 110 | 1.1.1.5.6.1.2 | Building URD | manual | 44d | 2026-08-03 | 2026-09-30 | 109SS+20160emin |  |  |  | start no earlier than 2026-08-03 |  |  |  |
| 111 | 1.1.1.5.6.1.3 | RSD &Development | manual | 122d | 2026-08-31 | 2027-02-15 | 110SS+40320emin |  |  |  | start no earlier than 2026-08-31 |  |  |  |
| 112 | 1.1.1.5.6.1.4 | SIT | manual | 103d | 2026-11-02 | 2027-03-19 | 111SS+90720emin |  |  |  | start no earlier than 2026-11-02 |  |  |  |
| 113 | 1.1.1.5.6.1.5 | UAT | manual | 90d | 2026-12-15 | 2027-04-15 | 112SS+106560emin |  |  |  | start no earlier than 2026-12-15 |  |  |  |
| 114 | 1.1.1.5.6.2 | **Bakong** |  | 195d | 2026-07-24 | 2027-04-15 |  |  |  | 0d |  |  |  |  |
| 115 | 1.1.1.5.6.2.1 | Workshop GAP analysis | manual | 29d | 2026-07-24 | 2026-08-31 |  |  |  |  | start no earlier than 2026-07-24 |  |  |  |
| 116 | 1.1.1.5.6.2.2 | Building URD | manual | 44d | 2026-08-03 | 2026-09-30 | 115SS+20160emin |  |  |  | start no earlier than 2026-08-03 |  |  |  |
| 117 | 1.1.1.5.6.2.3 | RSD &Development | manual | 122d | 2026-08-31 | 2027-02-15 | 116SS+40320emin |  |  |  | start no earlier than 2026-08-31 |  |  |  |
| 118 | 1.1.1.5.6.2.4 | SIT | manual | 103d | 2026-11-02 | 2027-03-19 | 117SS+90720emin |  |  |  | start no earlier than 2026-11-02 |  |  |  |
| 119 | 1.1.1.5.6.2.5 | UAT | manual | 90d | 2026-12-15 | 2027-04-15 | 118SS+106560emin |  |  |  | start no earlier than 2026-12-15 |  |  |  |
| 120 | 1.1.1.5.6.3 | **Hanabank_ Remittance** |  | 195d | 2026-07-24 | 2027-04-15 |  |  |  | 0d |  |  |  |  |
| 121 | 1.1.1.5.6.3.1 | Workshop GAP analysis | manual | 29d | 2026-07-24 | 2026-08-31 |  |  |  |  | start no earlier than 2026-07-24 |  |  |  |
| 122 | 1.1.1.5.6.3.2 | Building URD | manual | 44d | 2026-08-03 | 2026-09-30 | 121SS+20160emin |  |  |  | start no earlier than 2026-08-03 |  |  |  |
| 123 | 1.1.1.5.6.3.3 | RSD &Development | manual | 122d | 2026-08-31 | 2027-02-15 | 122SS+40320emin |  |  |  | start no earlier than 2026-08-31 |  |  |  |
| 124 | 1.1.1.5.6.3.4 | SIT | manual | 103d | 2026-11-02 | 2027-03-19 | 123SS+90720emin |  |  |  | start no earlier than 2026-11-02 |  |  |  |
| 125 | 1.1.1.5.6.3.5 | UAT | manual | 90d | 2026-12-15 | 2027-04-15 | 124SS+106560emin |  |  |  | start no earlier than 2026-12-15 |  |  |  |

Notes:
- 102: Comments: Khoihm
- 107: Comments: Trangnta
- 108: Comments: Trangnta
- 114: Comments: Trangnta
- 115: Comments: nếu không tích hợp trực tiếp vào core thì sẽ bỏ ra khỏi kế hoạch
- 120: Comments: Trangnta

| ID | WBS | Task | Type | Duration | Start | Finish | Predecessors | Complete | Remaining | Total slack | Constraint | Work | Actual work | Comments |
| --- | --- | --- | --- | --- | --- | --- | --- | --- | --- | --- | --- | --- | --- | --- |
| 126 | 1.1.1.5.6.4 | **TelegramAlert_Merchant** |  | 195d | 2026-07-24 | 2027-04-15 |  |  |  | 0d |  |  |  | Trangnta |
| 127 | 1.1.1.5.6.4.1 | Workshop GAP analysis | manual | 29d | 2026-07-24 | 2026-08-31 |  |  |  |  | start no earlier than 2026-07-24 |  |  |  |
| 128 | 1.1.1.5.6.4.2 | Building URD | manual | 44d | 2026-08-03 | 2026-09-30 | 127SS+20160emin |  |  |  | start no earlier than 2026-08-03 |  |  |  |
| 129 | 1.1.1.5.6.4.3 | RSD &Development | manual | 122d | 2026-08-31 | 2027-02-15 | 128SS+40320emin |  |  |  | start no earlier than 2026-08-31 |  |  |  |
| 130 | 1.1.1.5.6.4.4 | SIT | manual | 103d | 2026-11-02 | 2027-03-19 | 129SS+90720emin |  |  |  | start no earlier than 2026-11-02 |  |  |  |
| 131 | 1.1.1.5.6.4.5 | UAT | manual | 90d | 2026-12-15 | 2027-04-15 | 130SS+106560emin |  |  |  | start no earlier than 2026-12-15 |  |  |  |
| 132 | 1.1.1.5.7 | **7. Squad RM_KH_InPay** |  | 212d | 2026-07-01 A | 2027-04-15 |  | 1% | 209.85d | 0d |  | 12280h | 652.05h | Trangnta |
| 133 | 1.1.1.5.7.1 | **Vn_Transfer** |  | 195d | 2026-07-24 | 2027-04-15 |  |  |  | 0d |  |  |  | Trangnta |
| 134 | 1.1.1.5.7.1.1 | Workshop GAP analysis | manual | 29d | 2026-07-24 | 2026-08-31 |  |  |  |  | start no earlier than 2026-07-24 |  |  |  |
| 135 | 1.1.1.5.7.1.2 | Building URD | manual | 44d | 2026-08-03 | 2026-09-30 | 134SS+20160emin |  |  |  | start no earlier than 2026-08-03 |  |  |  |
| 136 | 1.1.1.5.7.1.3 | RSD &Development | manual | 122d | 2026-08-31 | 2027-02-15 | 135SS+40320emin |  |  |  | start no earlier than 2026-08-31 |  |  |  |
| 137 | 1.1.1.5.7.1.4 | SIT | manual | 103d | 2026-11-02 | 2027-03-19 | 136SS+90720emin |  |  |  | start no earlier than 2026-11-02 |  |  |  |
| 138 | 1.1.1.5.7.1.5 | UAT | manual | 90d | 2026-12-15 | 2027-04-15 | 137SS+106560emin |  |  |  | start no earlier than 2026-12-15 |  |  |  |
| 139 | 1.1.1.5.7.2 | **eMoney_VN_Transfer** |  | 195d | 2026-07-24 | 2027-04-15 |  |  |  | 0d |  |  |  | Trangnta |
| 140 | 1.1.1.5.7.2.1 | Workshop GAP analysis | manual | 29d | 2026-07-24 | 2026-08-31 |  |  |  |  | start no earlier than 2026-07-24 |  |  |  |
| 141 | 1.1.1.5.7.2.2 | Building URD | manual | 44d | 2026-08-03 | 2026-09-30 | 140SS+20160emin |  |  |  | start no earlier than 2026-08-03 |  |  |  |
| 142 | 1.1.1.5.7.2.3 | RSD &Development | manual | 122d | 2026-08-31 | 2027-02-15 | 141SS+40320emin |  |  |  | start no earlier than 2026-08-31 |  |  |  |
| 143 | 1.1.1.5.7.2.4 | SIT | manual | 103d | 2026-11-02 | 2027-03-19 | 142SS+90720emin |  |  |  | start no earlier than 2026-11-02 |  |  |  |
| 144 | 1.1.1.5.7.2.5 | UAT | manual | 90d | 2026-12-15 | 2027-04-15 | 143SS+106560emin |  |  |  | start no earlier than 2026-12-15 |  |  |  |
| 145 | 1.1.1.5.7.3 | **InPay** |  | 195d | 2026-07-24 | 2027-04-15 |  |  |  | 0d |  |  |  | Trangnta |
| 146 | 1.1.1.5.7.3.1 | Workshop GAP analysis | manual | 29d | 2026-07-24 | 2026-08-31 |  |  |  |  | start no earlier than 2026-07-24 |  |  |  |
| 147 | 1.1.1.5.7.3.2 | Building URD | manual | 44d | 2026-08-03 | 2026-09-30 | 146SS+20160emin |  |  |  | start no earlier than 2026-08-03 |  |  |  |
| 148 | 1.1.1.5.7.3.3 | RSD &Development | manual | 122d | 2026-08-31 | 2027-02-15 | 147SS+40320emin |  |  |  | start no earlier than 2026-08-31 |  |  |  |
| 149 | 1.1.1.5.7.3.4 | SIT | manual | 103d | 2026-11-02 | 2027-03-19 | 148SS+90720emin |  |  |  | start no earlier than 2026-11-02 |  |  |  |
| 150 | 1.1.1.5.7.3.5 | UAT | manual | 90d | 2026-12-15 | 2027-04-15 | 149SS+106560emin |  |  |  | start no earlier than 2026-12-15 |  |  |  |

| ID | WBS | Task | Type | Duration | Start | Finish | Predecessors | Complete | Remaining | Total slack | Constraint | Resources | Work | Actual work | Comments |
| --- | --- | --- | --- | --- | --- | --- | --- | --- | --- | --- | --- | --- | --- | --- | --- |
| 151 | 1.1.1.5.7.4 | **8.Squad RM_CTQT_QR** |  | 195d | 2026-07-24 | 2027-04-15 |  |  |  | 0d |  | BIDC | 1472h |  | Thoatk |
| 152 | 1.1.1.5.7.4.1 | **KHQR_ERP** |  | 195d | 2026-07-24 | 2027-04-15 |  |  |  | 0d |  |  |  |  | Thoatk |
| 153 | 1.1.1.5.7.4.1.1 | Workshop GAP analysis | manual | 29d | 2026-07-24 | 2026-08-31 |  |  |  |  | start no earlier than 2026-07-24 |  |  |  |  |
| 154 | 1.1.1.5.7.4.1.2 | Building URD | manual | 44d | 2026-08-03 | 2026-09-30 | 153SS+20160emin |  |  |  | start no earlier than 2026-08-03 |  |  |  |  |
| 155 | 1.1.1.5.7.4.1.3 | RSD &Development | manual | 122d | 2026-08-31 | 2027-02-15 | 154SS+40320emin |  |  |  | start no earlier than 2026-08-31 |  |  |  |  |
| 156 | 1.1.1.5.7.4.1.4 | SIT | manual | 103d | 2026-11-02 | 2027-03-19 | 155SS+90720emin |  |  |  | start no earlier than 2026-11-02 |  |  |  |  |
| 157 | 1.1.1.5.7.4.1.5 | UAT | manual | 90d | 2026-12-15 | 2027-04-15 | 156SS+106560emin |  |  |  | start no earlier than 2026-12-15 |  |  |  |  |
| 158 | 1.1.1.5.7.4.2 | **KHQR_SmartPOS** |  | 195d | 2026-07-24 | 2027-04-15 |  |  |  | 0d |  |  |  |  | Thoatk |
| 159 | 1.1.1.5.7.4.2.1 | Workshop GAP analysis | manual | 29d | 2026-07-24 | 2026-08-31 |  |  |  |  | start no earlier than 2026-07-24 |  |  |  |  |
| 160 | 1.1.1.5.7.4.2.2 | Building URD | manual | 44d | 2026-08-03 | 2026-09-30 | 159SS+20160emin |  |  |  | start no earlier than 2026-08-03 |  |  |  |  |
| 161 | 1.1.1.5.7.4.2.3 | RSD &Development | manual | 122d | 2026-08-31 | 2027-02-15 | 160SS+40320emin |  |  |  | start no earlier than 2026-08-31 |  |  |  |  |
| 162 | 1.1.1.5.7.4.2.4 | SIT | manual | 103d | 2026-11-02 | 2027-03-19 | 161SS+90720emin |  |  |  | start no earlier than 2026-11-02 |  |  |  |  |
| 163 | 1.1.1.5.7.4.2.5 | UAT | manual | 90d | 2026-12-15 | 2027-04-15 | 162SS+106560emin |  |  |  | start no earlier than 2026-12-15 |  |  |  |  |
| 164 | 1.1.1.5.7.4.3 | **SWIFT GPI** |  | 195d | 2026-07-24 | 2027-04-15 |  |  |  | 0d |  |  |  |  | Thoatk |
| 165 | 1.1.1.5.7.4.3.1 | Workshop GAP analysis | manual | 29d | 2026-07-24 | 2026-08-31 |  |  |  |  | start no earlier than 2026-07-24 |  |  |  |  |
| 166 | 1.1.1.5.7.4.3.2 | Building URD | manual | 44d | 2026-08-03 | 2026-09-30 | 165SS+20160emin |  |  |  | start no earlier than 2026-08-03 |  |  |  |  |
| 167 | 1.1.1.5.7.4.3.3 | RSD &Development | manual | 122d | 2026-08-31 | 2027-02-15 | 166SS+40320emin |  |  |  | start no earlier than 2026-08-31 |  |  |  |  |
| 168 | 1.1.1.5.7.4.3.4 | SIT | manual | 103d | 2026-11-02 | 2027-03-19 | 167SS+90720emin |  |  |  | start no earlier than 2026-11-02 |  |  |  |  |
| 169 | 1.1.1.5.7.4.3.5 | UAT | manual | 90d | 2026-12-15 | 2027-04-15 | 168SS+106560emin |  |  |  | start no earlier than 2026-12-15 |  |  |  |  |
| 170 | 1.1.1.5.7.5 | **9.Squad_Card** |  | 212d | 2026-07-01 A | 2027-04-15 |  | 1% | 209.76d | 0d |  | BIDC | 2992h | 121.91h | hungpv |
| 171 | 1.1.1.5.7.5.1 | **SMARTVISTA CORE-SmartVisa** |  | 212d | 2026-07-01 A | 2027-04-15 |  | 1% | 210.03d | 0d |  |  |  |  | hungpv |
| 172 | 1.1.1.5.7.5.1.1 | Workshop GAP analysis | manual | 44d | 2026-07-01 A | 2026-08-31 |  | 10% | 39.6d |  | start no earlier than 2026-07-01 |  |  |  |  |
| 173 | 1.1.1.5.7.5.1.2 | Building URD | manual | 47d | 2026-07-15 | 2026-09-15 | 172SS+20160emin |  |  |  | start no earlier than 2026-07-15 |  |  |  |  |
| 174 | 1.1.1.5.7.5.1.3 | RSD &Development | manual | 133d | 2026-08-17 | 2027-02-15 | 173SS+47520emin |  |  |  | start no earlier than 2026-08-17 |  |  |  |  |
| 175 | 1.1.1.5.7.5.1.4 | SIT | manual | 137d | 2026-09-15 | 2027-03-19 | 174SS+41760emin |  |  |  | start no earlier than 2026-09-15 |  |  |  |  |
| 176 | 1.1.1.5.7.5.1.5 | UAT | manual | 112d | 2026-11-15 | 2027-04-15 | 175SS+87840emin |  |  |  | start no earlier than 2026-11-15 |  |  |  |  |

| ID | WBS | Task | Type | Duration | Start | Finish | Predecessors | Complete | Remaining | Total slack | Constraint | Resources | Work | Actual work | Comments |
| --- | --- | --- | --- | --- | --- | --- | --- | --- | --- | --- | --- | --- | --- | --- | --- |
| 177 | 1.1.1.5.7.5.2 | **Card Gateway Utility** |  | 212d | 2026-07-01 A | 2027-04-15 |  | 1% | 209.95d | 0d |  |  |  |  | hungpv |
| 178 | 1.1.1.5.7.5.2.1 | Workshop GAP analysis | manual | 46d | 2026-07-01 A | 2026-08-31 |  | 10% | 41.4d |  | start no earlier than 2026-07-01 |  |  |  |  |
| 179 | 1.1.1.5.7.5.2.2 | Building URD | manual | 47d | 2026-07-15 | 2026-09-15 | 178SS+20160emin |  |  |  | start no earlier than 2026-07-15 |  |  |  |  |
| 180 | 1.1.1.5.7.5.2.3 | RSD &Development | manual | 133d | 2026-08-17 | 2027-02-15 | 179SS+47520emin |  |  |  | start no earlier than 2026-08-17 |  |  |  |  |
| 181 | 1.1.1.5.7.5.2.4 | SIT | manual | 137d | 2026-09-15 | 2027-03-19 | 180SS+41760emin |  |  |  | start no earlier than 2026-09-15 |  |  |  |  |
| 182 | 1.1.1.5.7.5.2.5 | UAT | manual | 112d | 2026-11-15 | 2027-04-15 | 181SS+87840emin |  |  |  | start no earlier than 2026-11-15 |  |  |  |  |
| 183 | 1.1.1.5.7.5.3 | **Card Settlement and reconciliation** |  | 212d | 2026-07-01 A | 2027-04-15 |  | 1% | 209.95d | 0d |  |  |  |  | hungpv |
| 184 | 1.1.1.5.7.5.3.1 | Workshop GAP analysis | manual | 46d | 2026-07-01 A | 2026-08-31 |  | 10% | 41.4d |  | start no earlier than 2026-07-01 |  |  |  |  |
| 185 | 1.1.1.5.7.5.3.2 | Building URD | manual | 47d | 2026-07-15 | 2026-09-15 | 184SS+20160emin |  |  |  | start no earlier than 2026-07-15 |  |  |  |  |
| 186 | 1.1.1.5.7.5.3.3 | RSD &Development | manual | 133d | 2026-08-17 | 2027-02-15 | 185SS+47520emin |  |  |  | start no earlier than 2026-08-17 |  |  |  |  |
| 187 | 1.1.1.5.7.5.3.4 | SIT | manual | 137d | 2026-09-15 | 2027-03-19 | 186SS+41760emin |  |  |  | start no earlier than 2026-09-15 |  |  |  |  |
| 188 | 1.1.1.5.7.5.3.5 | UAT | manual | 112d | 2026-11-15 | 2027-04-15 | 187SS+87840emin |  |  |  | start no earlier than 2026-11-15 |  |  |  |  |
| 189 | 1.1.1.5.7.5.4 | **CGS** |  | 212d | 2026-07-01 A | 2027-04-15 |  | 1% | 209.95d | 0d |  |  |  |  | hungpv |
| 190 | 1.1.1.5.7.5.4.1 | Workshop GAP analysis | manual | 46d | 2026-07-01 A | 2026-08-31 |  | 10% | 41.4d |  | start no earlier than 2026-07-01 |  |  |  |  |
| 191 | 1.1.1.5.7.5.4.2 | Building URD | manual | 47d | 2026-07-15 | 2026-09-15 | 190SS+20160emin |  |  |  | start no earlier than 2026-07-15 |  |  |  |  |
| 192 | 1.1.1.5.7.5.4.3 | RSD &Development | manual | 133d | 2026-08-17 | 2027-02-15 | 191SS+47520emin |  |  |  | start no earlier than 2026-08-17 |  |  |  |  |
| 193 | 1.1.1.5.7.5.4.4 | SIT | manual | 137d | 2026-09-15 | 2027-03-19 | 192SS+41760emin |  |  |  | start no earlier than 2026-09-15 |  |  |  |  |
| 194 | 1.1.1.5.7.5.4.5 | UAT | manual | 112d | 2026-11-15 | 2027-04-15 | 193SS+87840emin |  |  |  | start no earlier than 2026-11-15 |  |  |  |  |
| 195 | 1.1.1.5.7.5.5 | **Free management** |  | 212d | 2026-07-01 A | 2027-04-15 |  | 1% | 208.92d | 0d |  | BIDC | 1496h | 60.95h | hungpv |
| 196 | 1.1.1.5.7.5.5.1 | Workshop GAP analysis | manual | 46d | 2026-07-01 A | 2026-08-31 |  | 15% | 39.1d |  | start no earlier than 2026-07-01 |  |  |  |  |
| 197 | 1.1.1.5.7.5.5.2 | Building URD | manual | 47d | 2026-07-15 | 2026-09-15 | 196SS+20160emin |  |  |  | start no earlier than 2026-07-15 |  |  |  |  |
| 198 | 1.1.1.5.7.5.5.3 | RSD &Development | manual | 133d | 2026-08-17 | 2027-02-15 | 197SS+47520emin |  |  |  | start no earlier than 2026-08-17 |  |  |  |  |
| 199 | 1.1.1.5.7.5.5.4 | SIT | manual | 137d | 2026-09-15 | 2027-03-19 | 198SS+41760emin |  |  |  | start no earlier than 2026-09-15 |  |  |  |  |
| 200 | 1.1.1.5.7.5.5.5 | UAT | manual | 112d | 2026-11-15 | 2027-04-15 | 199SS+87840emin |  |  |  | start no earlier than 2026-11-15 |  |  |  |  |

| ID | WBS | Task | Type | Duration | Start | Finish | Predecessors | Complete | Remaining | Total slack | Constraint | Resources | Work | Actual work | Comments |
| --- | --- | --- | --- | --- | --- | --- | --- | --- | --- | --- | --- | --- | --- | --- | --- |
| 201 | 1.1.1.5.7.6 | **10. Squad GL _ERP** |  | 212d | 2026-07-01 A | 2027-04-15 |  | 11% | 189.59d | 0d |  | BIDC | 696h | 60.95h | hoavtt |
| 202 | 1.1.1.5.7.6.1 | **ERP Hải Ngoại** |  | 212d | 2026-07-01 A | 2027-04-15 |  | 11% | 189.59d | 0d |  |  |  |  | hoavtt |
| 203 | 1.1.1.5.7.6.1.1 | **Phase 1** |  | 112d | 2026-07-01 A | 2026-11-30 |  | 24% | 84.64d | 0d |  |  |  |  |  |
| 204 | 1.1.1.5.7.6.1.1.1 | Workshop GAP analysis | manual | 35d | 2026-07-01 A | 2026-08-15 |  | 70% | 10.2d |  | start no earlier than 2026-07-01 |  |  |  |  |
| 205 | 1.1.1.5.7.6.1.1.2 | Building URD 1 | manual | 35d | 2026-07-01 A | 2026-08-15 | 204SS | 50% | 17d |  | start no earlier than 2026-07-01 |  |  |  |  |
| 206 | 1.1.1.5.7.6.1.1.3 | RSD 1 &Development 1 | manual | 33d | 2026-08-18 | 2026-09-30 | 205FS+3780emin |  |  |  | start no earlier than 2026-08-18 |  |  |  |  |
| 207 | 1.1.1.5.7.6.1.1.4 | SIT 1 | manual | 22d | 2026-09-01 | 2026-09-30 | 205FS+23940emin |  |  |  | start no earlier than 2026-09-01 |  |  |  |  |
| 208 | 1.1.1.5.7.6.1.1.5 | UAT 1 | manual | 44d | 2026-10-01 | 2026-11-30 | 207FS+900emin |  |  |  | start no earlier than 2026-10-01 |  |  |  |  |
| 209 | 1.1.1.5.7.6.1.2 | **Phase 2** |  | 100d | 2026-12-01 | 2027-04-15 |  |  |  | 0d |  |  |  |  |  |
| 210 | 1.1.1.5.7.6.1.2.1 | Workshop GAP analysis | manual | 11d | 2026-12-01 | 2026-12-15 |  |  |  |  | start no earlier than 2026-12-01 |  |  |  |  |
| 211 | 1.1.1.5.7.6.1.2.2 | Building URD 2 | manual | 23d | 2026-12-01 | 2026-12-31 | 210SS |  |  |  | start no earlier than 2026-12-01 |  |  |  |  |
| 212 | 1.1.1.5.7.6.1.2.3 | RSD 2 &Development 2 | manual | 31d | 2027-01-04 | 2027-02-15 | 211FS+5220emin |  |  |  | start no earlier than 2027-01-04 |  |  |  |  |
| 213 | 1.1.1.5.7.6.1.2.4 | SIT 2 | manual | 78d | 2026-12-15 | 2027-03-30 | 211SS+20160emin |  |  |  | start no earlier than 2026-12-15 |  |  |  |  |
| 214 | 1.1.1.5.7.6.1.2.5 | UAT 2 | manual | 76d | 2027-01-04 | 2027-04-15 | 213SS+28800emin |  |  |  | start no earlier than 2027-01-04 |  |  |  |  |
| 215 | 1.1.1.5.7.7 | **11.SQUAD GL CORE HUB** |  | 200d | 2026-07-01 A | 2027-03-30 |  | 5% | 190.93d | 0d |  | BIDC | 1232h | 347.28h | oanhpt |
| 216 | 1.1.1.5.7.7.1 | Workshop GAP analysis | manual | 44d | 2026-07-01 A | 2026-08-31 |  | 30% | 30.8d |  | start no earlier than 2026-07-01 |  |  |  |  |
| 217 | 1.1.1.5.7.7.2 | Building URD | manual | 45d | 2026-08-01 | 2026-09-30 | 216SS+44640emin |  |  |  | start no earlier than 2026-08-01 |  |  |  |  |
| 218 | 1.1.1.5.7.7.3 | RSD &Development | manual | 56d | 2026-09-15 | 2026-11-30 | 217SS+64800emin |  |  |  | start no earlier than 2026-09-15 |  |  |  |  |
| 219 | 1.1.1.5.7.7.4 | SIT | manual | 80d | 2026-10-15 | 2027-01-30 | 218SS+43200emin |  |  |  | start no earlier than 2026-10-15 |  |  |  |  |
| 220 | 1.1.1.5.7.7.5 | UAT | manual | 67d | 2026-12-30 | 2027-03-30 | 219SS+109440emin |  |  |  | start no earlier than 2026-12-30 |  |  |  |  |
| 221 | 1.1.1.5.7.8 | **12. Squad GL _MIS** |  | 189d | 2026-08-01 A | 2027-04-15 |  |  | 189d | 0d |  | BIDC | 1400h | 60.95h | tungnt11 |
| 222 | 1.1.1.5.7.8.1 | Workshop GAP analysis | manual | 34d | 2026-08-01 | 2026-09-15 |  |  |  |  | start no earlier than 2026-08-01 |  |  |  |  |
| 223 | 1.1.1.5.7.8.2 | Building URD | manual | 22d | 2026-09-01 | 2026-09-30 |  |  |  |  | start no earlier than 2026-09-01 |  |  |  |  |
| 224 | 1.1.1.5.7.8.3 | RSD &Development | manual | 132d | 2026-08-18 | 2027-02-15 | 223SS+46080emin |  |  |  | start no earlier than 2026-08-18 |  |  |  |  |
| 225 | 1.1.1.5.7.8.4 | SIT | manual | 103d | 2026-11-02 | 2027-03-19 | 223FS+68580emin |  |  |  | start no earlier than 2026-11-02 |  |  |  |  |
| 226 | 1.1.1.5.7.8.5 | UAT | manual | 67d | 2027-01-15 | 2027-04-15 | 225SS+106560emin |  |  |  | start no earlier than 2027-01-15 |  |  |  |  |

| ID | WBS | Task | Type | Duration | Start | Finish | Predecessors | Remaining | Total slack | Constraint | Resources | Work | Actual work | Comments |
| --- | --- | --- | --- | --- | --- | --- | --- | --- | --- | --- | --- | --- | --- | --- |
| 227 | 1.1.1.5.7.9 | **13.Squad_LN** |  | 189d | 2026-08-01 A | 2027-04-15 |  | 189d | 0d |  | BIDC | 1496h | 60.95h | dungvt6 |
| 228 | 1.1.1.5.7.9.1 | **RLOS** |  | 189d | 2026-08-01 | 2027-04-15 |  |  | 0d |  |  |  |  | dungvt6 |
| 229 | 1.1.1.5.7.9.1.1 | Workshop GAP analysis | manual | 34d | 2026-08-01 | 2026-09-15 |  |  |  | start no earlier than 2026-08-01 |  |  |  |  |
| 230 | 1.1.1.5.7.9.1.2 | Building URD | manual | 22d | 2026-09-01 | 2026-09-30 | 229SS+44640emin |  |  | start no earlier than 2026-09-01 |  |  |  |  |
| 231 | 1.1.1.5.7.9.1.3 | RSD &Development | manual | 111d | 2026-09-15 | 2027-02-15 | 230SS+20160emin |  |  | start no earlier than 2026-09-15 |  |  |  |  |
| 232 | 1.1.1.5.7.9.1.4 | SIT | manual | 103d | 2026-11-02 | 2027-03-19 | 230FS+46980emin |  |  | start no earlier than 2026-11-02 |  |  |  |  |
| 233 | 1.1.1.5.7.9.1.5 | UAT | manual | 67d | 2027-01-15 | 2027-04-15 | 232SS+106560emin |  |  | start no earlier than 2027-01-15 |  |  |  |  |
| 234 | 1.1.1.5.7.9.2 | **Báo cáo chương trình quản lý tín dụng (CMR)** |  | 189d | 2026-08-01 | 2027-04-15 |  |  | 0d |  |  |  |  | dungvt6 |
| 235 | 1.1.1.5.7.9.2.1 | Workshop GAP analysis | manual | 34d | 2026-08-01 | 2026-09-15 |  |  |  | start no earlier than 2026-08-01 |  |  |  |  |
| 236 | 1.1.1.5.7.9.2.2 | Building URD | manual | 22d | 2026-09-01 | 2026-09-30 | 235SS+44640emin |  |  | start no earlier than 2026-09-01 |  |  |  |  |
| 237 | 1.1.1.5.7.9.2.3 | RSD &Development | manual | 111d | 2026-09-15 | 2027-02-15 | 236SS+20160emin |  |  | start no earlier than 2026-09-15 |  |  |  |  |
| 238 | 1.1.1.5.7.9.2.4 | SIT | manual | 103d | 2026-11-02 | 2027-03-19 | 236FS+46980emin |  |  | start no earlier than 2026-11-02 |  |  |  |  |
| 239 | 1.1.1.5.7.9.2.5 | UAT | manual | 67d | 2027-01-15 | 2027-04-15 | 238SS+106560emin |  |  | start no earlier than 2027-01-15 |  |  |  |  |
| 240 | 1.1.1.5.7.10 | **14.Squad_QTTS2** |  | 189d | 2026-08-01 | 2027-04-15 |  |  | 0d |  | BIDC | 1496h |  |  |
| 241 | 1.1.1.5.7.10.1 | **Data Hub (Real Time)** |  | 189d | 2026-08-01 | 2027-04-15 |  |  | 0d |  |  |  |  | tinhdt |
| 242 | 1.1.1.5.7.10.1.1 | Workshop GAP analysis | manual | 22d | 2026-08-01 | 2026-08-30 |  |  |  | start no earlier than 2026-08-01 |  |  |  |  |
| 243 | 1.1.1.5.7.10.1.2 | Building URD | manual | 11d | 2026-09-01 | 2026-09-15 | 242FS+2340emin |  |  | start no earlier than 2026-09-01 |  |  |  |  |
| 244 | 1.1.1.5.7.10.1.3 | RSD &Development | manual | 100d | 2026-09-15 | 2027-01-29 | 243SS+20160emin |  |  | start no earlier than 2026-09-15 |  |  |  |  |
| 245 | 1.1.1.5.7.10.1.4 | SIT | manual | 100d | 2026-09-30 | 2027-02-15 | 243FS+21060emin |  |  | start no earlier than 2026-09-30 |  |  |  |  |
| 246 | 1.1.1.5.7.10.1.5 | UAT | manual | 122d | 2026-11-02 | 2027-04-15 | 245SS+43200emin |  |  | start no earlier than 2026-11-02 |  |  |  |  |
| 247 | 1.1.1.5.7.11 | **15.Squad_QTTS1** |  | 189d | 2026-08-01 | 2027-04-15 |  |  | 0d |  | BIDC | 1496h |  | anh_nd |
| 248 | 1.1.1.5.7.11.1 | **CPMS_Quản lý tham số tập trung** |  | 189d | 2026-08-01 | 2027-04-15 |  |  | 0d |  |  |  |  |  |
| 249 | 1.1.1.5.7.11.1.1 | Workshop GAP analysis | manual | 22d | 2026-08-01 | 2026-08-30 |  |  |  | start no earlier than 2026-08-01 |  |  |  |  |
| 250 | 1.1.1.5.7.11.1.2 | Building URD | manual | 11d | 2026-09-01 | 2026-09-15 | 249FS+2340emin |  |  | start no earlier than 2026-09-01 |  |  |  |  |
| 251 | 1.1.1.5.7.11.1.3 | RSD &Development | manual | 99d | 2026-09-15 | 2027-01-29 | 250SS+20160emin |  |  | start no earlier than 2026-09-15 |  |  |  |  |
| 252 | 1.1.1.5.7.11.1.4 | SIT | manual | 100d | 2026-09-30 | 2027-02-15 | 250FS+21060emin |  |  | start no earlier than 2026-09-30 |  |  |  |  |
| 253 | 1.1.1.5.7.11.1.5 | UAT | manual | 122d | 2026-11-02 | 2027-04-15 | 252SS+43200emin |  |  | start no earlier than 2026-11-02 |  |  |  |  |

| ID | WBS | Task | Type | Duration | Start | Finish | Predecessors | Remaining | Total slack | Constraint | Resources | Work | Actual work | Comments |
| --- | --- | --- | --- | --- | --- | --- | --- | --- | --- | --- | --- | --- | --- | --- |
| 254 | 1.1.1.5.7.11.2 | **IDM (One Accces)** |  | 189d | 2026-08-01 | 2027-04-15 |  |  | 0d |  |  |  |  | anh_nd |
| 255 | 1.1.1.5.7.11.2.1 | Workshop GAP analysis | manual | 22d | 2026-08-01 | 2026-08-30 |  |  |  | start no earlier than 2026-08-01 |  |  |  |  |
| 256 | 1.1.1.5.7.11.2.2 | Building URD | manual | 11d | 2026-09-01 | 2026-09-15 | 255FS+2340emin |  |  | start no earlier than 2026-09-01 |  |  |  |  |
| 257 | 1.1.1.5.7.11.2.3 | RSD &Development | manual | 99d | 2026-09-15 | 2027-01-29 | 256SS+20160emin |  |  | start no earlier than 2026-09-15 |  |  |  |  |
| 258 | 1.1.1.5.7.11.2.4 | SIT | manual | 100d | 2026-09-30 | 2027-02-15 | 256FS+21060emin |  |  | start no earlier than 2026-09-30 |  |  |  |  |
| 259 | 1.1.1.5.7.11.2.5 | UAT | manual | 122d | 2026-11-02 | 2027-04-15 | 258SS+43200emin |  |  | start no earlier than 2026-11-02 |  |  |  |  |
| 260 | 1.1.1.5.7.12 | **16. Squad OES** |  | 189d | 2026-08-01 | 2027-04-15 |  |  | 0d |  |  |  |  | anh_nd |
| 261 | 1.1.1.5.7.12.1 | Workshop GAP analysis | manual | 34d | 2026-08-01 | 2026-09-15 |  |  |  | start no earlier than 2026-08-01 |  |  |  |  |
| 262 | 1.1.1.5.7.12.2 | Building URD | manual | 22d | 2026-09-01 | 2026-09-30 | 261FS+2340emin |  |  | start no earlier than 2026-09-01 |  |  |  |  |
| 263 | 1.1.1.5.7.12.3 | RSD &Development | manual | 110d | 2026-09-15 | 2027-02-15 | 262SS+20160emin |  |  | start no earlier than 2026-09-15 |  |  |  |  |
| 264 | 1.1.1.5.7.12.4 | SIT | manual | 103d | 2026-11-02 | 2027-03-19 | 262FS+21060emin |  |  | start no earlier than 2026-11-02 |  |  |  |  |
| 265 | 1.1.1.5.7.12.5 | UAT | manual | 67d | 2027-01-15 | 2027-04-15 | 264SS+43200emin |  |  | start no earlier than 2027-01-15 |  |  |  |  |
| 266 | 1.1.1.6 | **6.DATA MIGRATION (5 Rounds)** |  | 171d | 2026-09-10 A | 2027-04-29 |  | 171d | 0d |  |  | 2992h | 515.76h | ducnt |
| 267 | 1.1.1.6.1 | **6.1 Data Mapping Workshop and Base line Document Sign Off** |  | 81d | 2026-09-10 A | 2026-12-30 |  | 81d | 0d |  | BIDC; FIS | 1248h | 515.76h |  |
| 268 | 1.1.1.6.1.1 | Customer | manual | 29d | 2026-09-10 | 2026-10-20 |  |  |  | start no earlier than 2026-09-10 |  |  |  |  |
| 269 | 1.1.1.6.1.2 | Deposit (SAV/DDA/CD) | manual | 26d | 2026-09-15 | 2026-10-20 | 268SS+7200emin |  |  | start no earlier than 2026-09-15 |  |  |  |  |
| 270 | 1.1.1.6.1.3 | Loan | manual | 26d | 2026-09-15 | 2026-10-20 | 269SS |  |  | start no earlier than 2026-09-15 |  |  |  |  |
| 271 | 1.1.1.6.1.4 | Teller | manual | 26d | 2026-09-15 | 2026-10-20 | 270SS |  |  | start no earlier than 2026-09-15 |  |  |  |  |
| 272 | 1.1.1.6.1.5 | GL | manual | 26d | 2026-09-15 | 2026-10-20 | 271SS |  |  | start no earlier than 2026-09-15 |  |  |  |  |
| 273 | 1.1.1.6.1.6 | Trade Finance | milestone, manual | 0d | 2026-12-30 | 2026-12-30 | 272FS+102240emin |  |  | start no earlier than 2026-12-30 |  |  |  | TDC |
| 274 | 1.1.1.6.2 | **6.2 Conversion Tool Development/Updation** |  | 104d | 2026-10-12 | 2027-03-01 |  |  | 0d |  | BIDC | 832h |  |  |
| 275 | 1.1.1.6.2.1 | Customer | manual | 15d | 2026-10-12 | 2026-10-30 |  |  |  | start no earlier than 2026-10-12 |  |  |  |  |
| 276 | 1.1.1.6.2.2 | Deposit (SAV/DDA/CD) | manual | 25d | 2026-10-22 | 2026-11-24 | 275SS+14400emin |  |  | start no earlier than 2026-10-22 |  |  |  |  |
| 277 | 1.1.1.6.2.3 | Loan | manual | 25d | 2026-10-22 | 2026-11-24 | 276SS |  |  | start no earlier than 2026-10-22 |  |  |  |  |
| 278 | 1.1.1.6.2.4 | GL | manual | 25d | 2026-10-22 | 2026-11-24 | 277SS |  |  | start no earlier than 2026-10-22 |  |  |  |  |
| 279 | 1.1.1.6.2.5 | Trade Finance | milestone, manual | 0d | 2027-03-01 | 2027-03-01 | 278FS+139680emin |  |  | start no earlier than 2027-03-01 |  |  |  | TDC |

| ID | WBS | Task | Type | Duration | Start | Finish | Predecessors | Remaining | Total slack | Constraint | Resources | Work | Actual work |
| --- | --- | --- | --- | --- | --- | --- | --- | --- | --- | --- | --- | --- | --- |
| 280 | 1.1.1.6.3 | **6.3 Trial Run (5 rounds)** |  | 112d | 2026-12-01 | 2027-04-29 |  |  | 0d |  |  | 912h |  |
| 281 | 1.1.1.6.3.1 | Trial run 1 | manual | 11d | 2026-12-01 | 2026-12-15 |  |  |  | start no earlier than 2026-12-01 | BIDC; FIS | 176h |  |
| 282 | 1.1.1.6.3.2 | Trial run 2 (Copy data to SIT/UAT) | manual | 8d | 2026-12-22 | 2026-12-31 | 281FS+9540emin |  |  | start no earlier than 2026-12-22 | BIDC; FIS | 128h |  |
| 283 | 1.1.1.6.3.3 | Trial run 3 | manual | 11d | 2027-03-01 | 2027-03-15 | 282FS+85860emin |  |  | start no earlier than 2027-03-01 | BIDC; FIS | 176h |  |
| 284 | 1.1.1.6.3.4 | Trial run 4 | manual | 11d | 2027-03-22 | 2027-04-05 | 283FS+9540emin |  |  | start no earlier than 2027-03-22 | BIDC; FIS | 176h |  |
| 285 | 1.1.1.6.3.5 | Trial run 5 | manual | 16d | 2027-04-12 | 2027-04-29 | 284FS+9540emin |  |  | start no earlier than 2027-04-12 | BIDC; FIS | 256h |  |
| 286 | 1.1.1.7 | **7.TESTING** |  | 211.2d | 2026-08-28 A | 2027-06-11 |  | 211.2d | 0d |  |  | 4570.4h | 44.81h |
| 287 | 1.1.1.7.1 | **7.1.Functional Testing** |  | 156.2d | 2026-08-28 | 2027-03-30 |  |  | 0d |  |  | 2010.4h |  |
| 288 | 1.1.1.7.1.1 | Develop Master Plan Test Strategy | manual | 13.2d | 2026-08-28 | 2026-09-15 |  |  |  | start no earlier than 2026-08-28 | BIDC | 105.6h |  |
| 289 | 1.1.1.7.1.2 | Parameter Verification Test (BIDC) | manual | 108.1d | 2026-09-03 | 2027-02-28 | 288FS+22500emin |  |  | start no earlier than 2026-09-03 | BIDC | 864.8h |  |
| 290 | 1.1.1.7.1.3 | System Integration Test (SIT - Core) (BIDC) | manual | 130d | 2026-09-03 | 2027-02-28 | 289SS+48emin |  |  | start no earlier than 2026-09-03 | BIDC | 1040h |  |
| 291 | 1.1.1.7.1.4 | System Integration Test (Integration) | manual | 54d | 2027-01-18 | 2027-03-30 | 290SS+156912emin |  |  | start no earlier than 2027-01-18 |  |  |  |
| 292 | 1.1.1.7.2 | **7.2 User Acceptance Testing (UAT) - BIDC** |  | 144d | 2026-10-01 A | 2027-04-15 |  | 144d | 0d |  |  | 1504h | 44.81h |
| 293 | 1.1.1.7.2.1 | Develop UAT Detail plan | manual | 44d | 2026-10-01 | 2026-11-30 |  |  |  | start no earlier than 2026-10-01 | BIDC | 352h |  |
| 294 | 1.1.1.7.2.2 | **UAT Execution** |  | 144d | 2026-10-01 A | 2027-04-15 |  | 144d | 0d |  | BIDC | 1152h | 44.81h |
| 295 | 1.1.1.7.2.2.1 | UAT Preparation (flow, test scenario, test case) | manual | 44d | 2026-10-01 | 2026-11-30 |  |  |  | start no earlier than 2026-10-01 |  |  |  |
| 296 | 1.1.1.7.2.2.2 | UAT - Profile | manual | 122d | 2026-11-02 | 2027-04-15 | 295FS+900emin |  |  | start no earlier than 2026-11-02 |  |  |  |
| 297 | 1.1.1.7.2.2.3 | UAT - Integration | manual | 122d | 2026-11-02 | 2027-04-15 | 296SS+44640emin |  |  | start no earlier than 2026-11-02 |  |  |  |
| 298 | 1.1.1.7.2.2.4 | UAT - BIDC End To End Testing | manual | 23d | 2027-03-16 | 2027-04-15 | 297SS+106560emin |  |  | start no earlier than 2027-03-16 |  |  |  |
| 299 | 1.1.1.7.2.2.5 | UAT Closure sign off | manual | 11d | 2027-04-01 | 2027-04-15 |  |  |  | start no earlier than 2027-04-01 |  |  |  |
| 300 | 1.1.1.7.3 | **7.3 Pilot** |  | 15d | 2027-05-03 | 2027-05-21 |  |  | 0d |  | BIDC | 120h |  |
| 301 | 1.1.1.7.3.1 | Pilot 1 | manual | 5d | 2027-05-03 | 2027-05-07 |  |  |  | start no earlier than 2027-05-03 |  |  |  |
| 302 | 1.1.1.7.3.2 | Pilot 2 | manual | 5d | 2027-05-17 | 2027-05-21 | 301FS+13860emin |  |  | start no earlier than 2027-05-17 |  |  |  |
| 303 | 1.1.1.7.4 | **7.4 Dress Rehearsal** |  | 10d | 2027-05-24 | 2027-06-04 |  |  | 0d |  | BIDC | 128h |  |
| 304 | 1.1.1.7.4.1 | Dress Rehearsal 1 | manual | 3d | 2027-05-24 | 2027-05-26 |  |  |  | start no earlier than 2027-05-24 | BIDC | 24h |  |
| 305 | 1.1.1.7.4.2 | Dress Rehearsal 2 | manual | 3d | 2027-06-02 | 2027-06-04 | 304FS+9540emin |  |  | start no earlier than 2027-06-02 | BIDC | 24h |  |

| ID | WBS | Task | Type | Duration | Start | Finish | Predecessors | Complete | Remaining | Total slack | Constraint | Resources | Work | Actual work |
| --- | --- | --- | --- | --- | --- | --- | --- | --- | --- | --- | --- | --- | --- | --- |
| 306 | 1.1.1.7.5 | **7.5 Non-Functional Test (Performance, Security)** |  | 47d | 2027-03-01 | 2027-04-30 |  |  |  | 0d |  | BIDC | 376h |  |
| 307 | 1.1.1.7.5.1 | Performance Testing | manual | 47d | 2027-03-01 | 2027-04-30 |  |  |  |  | start no earlier than 2027-03-01 |  |  |  |
| 308 | 1.1.1.7.5.2 | Security Test | manual | 23d | 2027-03-01 | 2027-03-31 | 307SS |  |  |  | start no earlier than 2027-03-01 |  |  |  |
| 309 | 1.1.1.7.5.3 | Operational Readiness Test (ORT) | manual | 11d | 2027-04-01 | 2027-04-15 | 308FS+900emin |  |  |  | start no earlier than 2027-04-01 |  |  |  |
| 310 | 1.1.1.7.6 | **7.6 HA/DR Test** |  | 54d | 2027-04-01 | 2027-06-11 |  |  |  | 0d |  | BIDC | 432h |  |
| 311 | 1.1.1.7.6.1 | Develop HA, DR detail plan and execution playbook | manual | 54d | 2027-04-01 | 2027-06-11 |  |  |  |  | start no earlier than 2027-04-01 |  |  |  |
| 312 | 1.1.1.7.6.2 | DRP testing | manual | 49d | 2027-04-01 | 2027-06-04 | 311SS |  |  |  | start no earlier than 2027-04-01 |  |  |  |
| 313 | 1.1.1.7.6.3 | HA testing | manual | 2d | 2027-06-10 | 2027-06-11 | 312FS+8100emin |  |  |  | start no earlier than 2027-06-10 |  |  |  |
| 314 | 1.1.1.8 | **8.TRAINING** |  | 250d | 2026-07-01 | 2027-06-04 |  |  |  | 0d |  | BIDC | 2000h |  |
| 315 | 1.1.1.8.1 | FIS training (TF, Dev on job training in Workshops) | milestone, manual | 0d | 2026-07-01 | 2026-07-01 |  |  |  |  |  | TDC |  |  |
| 316 | 1.1.1.8.2 | Quantum Treasury Training (FIS) | milestone, manual | 0d | 2026-07-01 | 2026-07-01 | 315 |  |  |  |  | TDC |  |  |
| 317 | 1.1.1.8.3 | End to End Training Core, App, TF, TR (BIDC) | manual | 144d | 2026-09-30 | 2027-04-14 | 316FS+131040emin |  |  |  | start no earlier than 2026-09-30 |  |  |  |
| 318 | 1.1.1.8.4 | UAT Training (BIDC) | manual | 44d | 2026-10-01 | 2026-11-30 | 317SS+1440emin |  |  |  | start no earlier than 2026-10-01 |  |  |  |
| 319 | 1.1.1.8.5 | DRP Training/ Support (BIDC) | manual | 24d | 2027-05-04 | 2027-06-04 | 318FS+222660emin |  |  |  | start no earlier than 2027-05-04 |  |  |  |
| 320 | 1.1.1.9 | **9.TECHNICAL & SOLUTION ARCHITECTURE WORKSTREAM** |  | 46d | 2026-07-01 A | 2026-08-31 |  | 13% | 40.25d | 0d |  | BIDC | 352h | 45h |
| 321 | 1.1.1.9.1 | Define Development model | manual | 44d | 2026-07-01 A | 2026-08-31 |  | 10% | 39.6d |  | start no earlier than 2026-07-01 |  |  |  |
| 322 | 1.1.1.9.2 | Provie Sizing Profile/Quantum | manual | 44d | 2026-07-01 A | 2026-08-31 | 321SS | 15% | 37.4d |  | start no earlier than 2026-07-01 |  |  |  |
| 323 | 1.1.1.10 | **10.INFRASTRUCTURE & ENVIROMENT** |  | 244d | 2026-07-24 A | 2027-06-18 |  | 1% | 242.62d | 0d |  | BIDC | 4936h | 1086.53h |
| 324 | 1.1.1.10.1 | **BIDV Environment Setup** |  | 244d | 2026-07-24 A | 2027-06-18 |  | 1% | 242.62d | 0d |  | BIDC | 3184h | 547.87h |
| 325 | 1.1.1.10.1.1 | Dev Enviroment setup for Quantum | manual | 24d | 2026-08-15 | 2026-09-15 |  |  |  |  |  |  |  |  |
| 326 | 1.1.1.10.1.2 | DEV Environment setup for Profile, Xpress, WebUI | manual | 23d | 2026-07-24 A | 2026-08-25 |  | 5% | 21.85d |  | start no earlier than 2026-07-24 | BIDC | 184h | 9.2h |
| 327 | 1.1.1.10.1.3 | SIT Environment setup for Quantum | manual | 22d | 2026-08-17 | 2026-09-15 | 326FS+2340emin |  |  |  | start no earlier than 2026-08-17 | BIDC | 176h |  |
| 328 | 1.1.1.10.1.4 | SIT Environment setup for Profile, Xpress, WebUI | manual | 22d | 2026-08-17 | 2026-09-15 | 327SS |  |  |  | start no earlier than 2026-08-17 | BIDC | 176h |  |
| 329 | 1.1.1.10.1.5 | UAT Environment setup for Profile, Xpress, WebUI | manual | 21d | 2026-09-16 | 2026-10-15 | 328FS+900emin |  |  |  | start no earlier than 2026-09-16 | BIDC | 168h |  |
| 330 | 1.1.1.10.1.6 | Data migration Environment setup for Profile, Xpress, WebUI | manual | 22d | 2026-10-16 | 2026-11-15 | 329FS+900emin |  |  |  | start no earlier than 2026-10-16 | BIDC | 176h |  |
| 331 | 1.1.1.10.1.7 | PT Environment set up for Profile, Xpress, WebUI, Quantum | manual | 12d | 2027-02-15 | 2027-02-28 | 330FS+131940emin |  |  |  | start no earlier than 2027-02-15 | BIDC | 96h |  |
| 332 | 1.1.1.10.1.8 | Security Test Environment Preparation | manual | 12d | 2027-02-15 | 2027-02-28 | 331SS |  |  |  | start no earlier than 2027-02-15 | BIDC | 96h |  |
| 333 | 1.1.1.10.1.9 | Pilot Environment setup for Profile, Xpress, WebUI, Quantum | manual | 23d | 2027-03-01 | 2027-03-31 | 332FS+900emin |  |  |  | start no earlier than 2027-03-01 | BIDC | 184h |  |
| 334 | 1.1.1.10.1.10 | DC, DR Environment Preparation for DRP Testing | manual | 16d | 2027-05-19 | 2027-06-09 | 333FS+70020emin |  |  |  | start no earlier than 2027-05-19 | BIDC | 128h |  |
| 335 | 1.1.1.10.1.11 | Environments Preparation for Golive | manual | 6d | 2027-06-12 | 2027-06-18 | 334FS+3780emin |  |  |  | start no earlier than 2027-06-12 | BIDC | 48h |  |

| ID | WBS | Task | Type | Duration | Start | Finish | Predecessors | Complete | Remaining | Total slack | Constraint | Resources | Work | Actual work | Comments |
| --- | --- | --- | --- | --- | --- | --- | --- | --- | --- | --- | --- | --- | --- | --- | --- |
| 336 | 1.1.1.11 | **11.DEPLOYMENT WORKSTREAM** |  | 70d | 2027-03-15 | 2027-06-15 |  |  |  | 0d |  | BIDC | 560h |  |  |
| 337 | 1.1.1.11.1 | **Develop Deployment Approach** |  | 70d | 2027-03-15 | 2027-06-15 |  |  |  | 0d |  |  |  |  |  |
| 338 | 1.1.1.11.1.1 | Develop Deployment Plan | manual | 64d | 2027-03-15 | 2027-06-05 |  |  |  |  | start no earlier than 2027-03-15 |  |  |  |  |
| 339 | 1.1.1.11.1.2 | Creation of Implementation Playbook | manual | 70d | 2027-03-15 | 2027-06-15 | 338SS |  |  |  | start no earlier than 2027-03-15 |  |  |  |  |
| 340 | 1.1.1.11.1.3 | Implementation Playbook | manual | 70d | 2027-03-15 | 2027-06-15 | 339SS |  |  |  | start no earlier than 2027-03-15 |  |  |  |  |
| 341 | 1.1.1.11.1.4 | Preparation for Golive Pilot, Golive | manual | 70d | 2027-03-15 | 2027-06-15 | 340SS |  |  |  | start no earlier than 2027-03-15 |  |  |  |  |
| 342 | 1.1.1.12 | **12.GOLIVE PHASE** |  | 141d | 2027-06-10 | 2027-12-20 |  |  |  | 0d |  |  | 3328h |  |  |
| 343 | 1.1.1.12.1 | **Production Deployment** |  | 141d | 2027-06-10 | 2027-12-20 |  |  |  | 0d |  | BIDC; FIS | 3328h |  |  |
| 344 | 1.1.1.12.1.1 | Pre Golive Onsite Training & Handholding Support | manual | 8d | 2027-06-10 | 2027-06-18 |  |  |  |  | start no earlier than 2027-06-10 |  |  |  |  |
| 345 | 1.1.1.12.1.2 | Golive (Core & Trade Finance, Treasury) | manual | 1d | 2027-06-19 | 2027-06-19 | 344FS+900emin |  |  |  | start no earlier than 2027-06-19 | BIDC; FIS | 16h |  |  |
| 346 | 1.1.1.12.1.3 | POST GOLIVE SUPPORT | manual | 132d | 2027-06-20 | 2027-12-20 | 345FS+900emin |  |  |  | start no earlier than 2027-06-20 | FIS | 1056h |  |  |
| 347 | 1.2 | **II - BIDC BANK TRADE FINANCE IMPLEMENTATION** |  | 370d | 2026-08-03 A | 2027-12-20 |  | 2% | 361.49d | 0d |  |  | 12648h | 200h |  |
| 348 | 1.2.1 | **BIDC Bank Trade Finance Implementation** |  | 370d | 2026-08-03 A | 2027-12-20 |  | 2% | 361.49d | 0d |  | FIS | 12648h | 200h |  |
| 349 | 1.2.1.1 | **Initiation Phase** |  | 38d | 2026-08-03 A | 2026-09-22 |  | 14% | 32.54d | 332d |  |  | 1392h | 200h |  |
| 350 | 1.2.1.1.1 | Resource Mobilization and Briefing |  | 25d | 2026-08-03 A | 2026-09-03 A |  | 100% |  |  | start no earlier than 2026-08-03 | FIS | 200h | 200h |  |
| 351 | 1.2.1.1.2 | **Process Definition and Documentation (internal, external, document repository)** |  | 15d | 2026-08-10 | 2026-08-28 |  |  |  | 350d |  | FIS | 360h |  | needs to be provided sooner |
| 352 | 1.2.1.1.2.1 | Forms and documents |  | 15d | 2026-08-10 | 2026-08-28 |  |  |  | 350d | start no earlier than 2026-08-10 | FIS | 120h |  |  |
| 353 | 1.2.1.1.2.2 | Deliver Project Definition Report (for TF and Treasury) |  | 15d | 2026-08-10 | 2026-08-28 |  |  |  | 350d | start no earlier than 2026-08-10 | FIS | 120h |  |  |
| 354 | 1.2.1.1.2.3 | Deliver Project Schedule to BIDC |  | 15d | 2026-08-10 | 2026-08-28 |  |  |  | 350d | start no earlier than 2026-08-10 | FIS | 120h |  |  |
| 355 | 1.2.1.1.3 | **Implementation Approach and Strategy** |  | 20d | 2026-08-10 | 2026-09-03 |  |  |  | 345d |  | FIS | 160h |  |  |
| 356 | 1.2.1.1.3.1 | Requirements Gathering Approach Finalization |  | 4w | 2026-08-10 | 2026-09-03 |  |  |  | 345d | start no earlier than 2026-08-10 | FIS | 160h |  |  |
| 357 | 1.2.1.1.4 | **Requirements Gathering Approach** |  | 33d | 2026-08-10 | 2026-09-22 |  |  |  | 332d |  | FIS | 584h |  |  |
| 358 | 1.2.1.1.4.1 | Functional Gathering Approach |  | 4w | 2026-08-10 | 2026-09-03 |  |  |  | 345d | start no earlier than 2026-08-10 | FIS | 160h |  |  |
| 359 | 1.2.1.1.4.2 | RTM Mapping Exercise (Trade Finance) |  | 4w | 2026-08-10 | 2026-09-03 |  |  |  | 345d | start no earlier than 2026-08-10 | FIS | 160h |  |  |

| ID | WBS | Task | Type | Duration | Start | Finish | Predecessors | Total slack | Free slack | Constraint | Resources | Work |
| --- | --- | --- | --- | --- | --- | --- | --- | --- | --- | --- | --- | --- |
| 360 | 1.2.1.1.4.3 | **Workshop Plan** |  | 33d | 2026-08-10 | 2026-09-22 |  | 332d |  |  | FIS | 264h |
| 361 | 1.2.1.1.4.3.1 | Functional Workshops and Finalization of Plan |  | 6.6w | 2026-08-10 | 2026-09-22 |  | 332d |  | start no earlier than 2026-08-10 | FIS | 264h |
| 362 | 1.2.1.1.5 | **Setup VPN Access - PMO** |  | 10d | 2026-08-03 | 2026-08-14 |  | 360d |  |  | FIS | 80h |
| 363 | 1.2.1.1.5.1 | Provide Resource List to BIDV |  | 10d | 2026-08-03 | 2026-08-14 |  | 360d |  | start no earlier than 2026-08-03 | FIS | 80h |
| 364 | 1.2.1.1.6 | Project kick-off meeting | milestone | 1d | 2026-08-18 | 2026-08-18 |  | 358d |  | start no earlier than 2026-08-18 | FIS | 8h |
| 365 | 1.2.1.2 | **Requirement Analysis / Standard Feature Training phase (TF)** |  | 25d | 2026-09-14 | 2026-10-16 |  | 314d |  |  | FIS | 560h |
| 366 | 1.2.1.2.1 | **Trade Finance** |  | 25d | 2026-09-14 | 2026-10-16 |  | 314d |  |  |  | 560h |
| 367 | 1.2.1.2.1.1 | **WSTF01-TF General/ Fees** |  | 10d | 2026-09-14 | 2026-09-25 |  | 314d |  |  | FIS | 80h |
| 368 | 1.2.1.2.1.1.1 | Conduct Workshop + (Standard Feature Training) |  | 5d | 2026-09-14 | 2026-09-18 |  | 314d | 0d | start no earlier than 2026-09-14 | FIS | 40h |
| 369 | 1.2.1.2.1.1.2 | Document Preparation |  | 4d | 2026-09-21 | 2026-09-24 | 368 | 329d | 0d | start no earlier than 2021-04-06 | FIS | 32h |
| 370 | 1.2.1.2.1.1.3 | Requirements sign-off |  | 1d | 2026-09-25 | 2026-09-25 | 369 | 329d |  | start no earlier than 2021-04-09 | FIS | 8h |
| 371 | 1.2.1.2.1.2 | **WSTF06-Inland/ Foreign Bank Guarantees** |  | 10d | 2026-09-21 | 2026-10-02 |  | 314d |  |  | FIS | 160h |
| 372 | 1.2.1.2.1.2.1 | Conduct Workshop + (Standard Feature Training) |  | 5d | 2026-09-21 | 2026-09-25 | 368 | 314d | 0d | start no earlier than 2026-08-24 | FIS | 40h |
| 373 | 1.2.1.2.1.2.2 | Document Preparation |  | 4d | 2026-09-28 | 2026-10-01 | 372 | 324d | 0d | start no earlier than 2021-04-09 | FIS | 32h |
| 374 | 1.2.1.2.1.2.3 | Requirements sign-off |  | 1d | 2026-10-02 | 2026-10-02 | 373 | 324d |  | start no earlier than 2021-04-15 | FIS | 8h |
| 375 | 1.2.1.2.1.3 | **WSTF05-Exports LC (Foreign) & Inland/ Domestic Outward LC** |  | 10d | 2026-09-28 | 2026-10-09 |  | 314d |  |  | FIS | 160h |
| 376 | 1.2.1.2.1.3.1 | Conduct Workshop + (Standard Feature Training) |  | 5d | 2026-09-28 | 2026-10-02 | 372 | 314d | 0d | start no earlier than 2026-08-31 | FIS | 40h |
| 377 | 1.2.1.2.1.3.2 | Document Preparation |  | 4d | 2026-10-05 | 2026-10-08 | 376 | 319d | 0d | start no earlier than 2021-04-13 | FIS | 32h |
| 378 | 1.2.1.2.1.3.3 | Requirements sign-off |  | 1d | 2026-10-09 | 2026-10-09 | 377 | 319d |  | start no earlier than 2021-04-15 | FIS | 8h |
| 379 | 1.2.1.2.1.4 | **WSTF04-Imports LC (Foreign) & Inland/ Domestic Inward LC** |  | 10d | 2026-10-05 | 2026-10-16 |  | 314d |  |  | FIS | 160h |
| 380 | 1.2.1.2.1.4.1 | Conduct Workshop + (Standard Feature Training) |  | 5d | 2026-10-05 | 2026-10-09 | 376 | 314d | 0d | start no earlier than 2026-08-03 | FIS | 40h |
| 381 | 1.2.1.2.1.4.2 | Document Preparation |  | 4d | 2026-10-12 | 2026-10-15 | 380 | 314d | 0d | start no earlier than 2026-08-04 | FIS | 32h |
| 382 | 1.2.1.2.1.4.3 | Requirements sign-off |  | 1d | 2026-10-16 | 2026-10-16 | 381 | 314d |  | start no earlier than 2026-08-04 | FIS | 8h |
| 383 | 1.2.1.3 | **Data Migration** |  | 110d | 2026-12-01 | 2027-04-27 |  | 0d |  |  | FIS | 2072h |
| 384 | 1.2.1.3.1 | **Support Trial Runs from FIS** |  | 110d | 2026-12-01 | 2027-04-27 |  | 0d |  |  | FIS | 1256h |
| 385 | 1.2.1.3.1.1 | Trial run 1 | manual | 11d | 2026-12-01 | 2026-12-15 |  |  |  |  | BIDC | 88h |
| 386 | 1.2.1.3.1.2 | Trial run 2 |  | 8d | 2026-12-22 | 2026-12-31 |  | 259d |  | start no earlier than 2026-12-22 | BIDC | 64h |
| 387 | 1.2.1.3.1.3 | Trial run 3 |  | 11d | 2027-03-01 | 2027-03-15 |  | 205d |  | start no earlier than 2027-03-01 | BIDC | 88h |
| 388 | 1.2.1.3.1.4 | Trial Run 4 |  | 11d | 2027-03-22 | 2027-04-05 |  | 190d |  | start no earlier than 2027-03-22 | BIDC | 88h |
| 389 | 1.2.1.3.1.5 | Trial Run 5 |  | 14d | 2027-04-12 | 2027-04-27 |  | 172d |  | start no earlier than 2027-04-12 | BIDC | 112h |

Notes:
- 366: Comments: FIS Updated - BIDC: reduce to 4 workshops => reschedule timeline for Workshop
- 375: Comments: FIS Updated - BIDC: combine 2 workshop into one
- 384: Comments: (FIS updated) Adjust title: Support form FIS, add more 1 item Trial run (follow by Core Profile)

| ID | WBS | Task | Duration | Start | Finish | Predecessors | Total slack | Free slack | Constraint | Resources | Work |
| --- | --- | --- | --- | --- | --- | --- | --- | --- | --- | --- | --- |
| 390 | 1.2.1.4 | **Design / Development / On the Job Training (Sprint Demo) Phase (TF)** | 84d | 2026-11-02 | 2027-02-24 |  | 220d | 0d |  | FIS | 464h |
| 391 | 1.2.1.4.1 | **Sprint Development** | 84d | 2026-11-02 | 2027-02-24 |  | 220d |  |  | FIS | 464h |
| 392 | 1.2.1.4.1.1 | **Sprint 1** | 16d | 2026-11-02 | 2026-11-20 |  | 223d | 0d |  |  | 80h |
| 393 | 1.2.1.4.1.1.1 | **Scrum 1 - WSTF01** | 15d | 2026-11-02 | 2026-11-19 |  | 224d |  |  |  | 80h |
| 394 | 1.2.1.4.1.1.1.1 | Design, Development & Unit Testing | 10d | 2026-11-02 | 2026-11-13 |  | 224d | 0d | start no earlier than 2026-11-02 |  |  |
| 395 | 1.2.1.4.1.1.1.2 | Prepare Sprint test cases | 10d | 2026-11-02 | 2026-11-13 |  | 224d | 0d | start no earlier than 2026-11-02 |  |  |
| 396 | 1.2.1.4.1.1.1.3 | Execute Sprint test cases | 10d | 2026-11-09 | 2026-11-19 | 395FS-5d | 224d | 0d | start no earlier than 2026-06-29 |  |  |
| 397 | 1.2.1.4.1.1.1.4 | Configuration | 10d | 2026-11-09 | 2026-11-19 | 395FS-5d | 224d |  | start no earlier than 2026-11-03 | FIS | 80h |
| 398 | 1.2.1.4.1.1.1.5 | Demo + On the Job Training for Deliverables of Sprint 1 | 1d | 2026-11-19 | 2026-11-19 | 396FF | 224d |  | start no earlier than 2025-06-06 |  |  |
| 399 | 1.2.1.4.1.1.2 | **Deployment for testing** | 12d | 2026-11-06 | 2026-11-20 |  | 223d |  |  |  |  |
| 400 | 1.2.1.4.1.1.2.1 | The first deployment 20 % to SIT env on Friday morning of week 1 | 1d | 2026-11-06 | 2026-11-06 | 394SS+4d | 224d | 0d | start no earlier than 2026-06-26 |  |  |
| 401 | 1.2.1.4.1.1.2.2 | The second deployment 30% to SIT env on Tuesday morning of week 2 | 1d | 2026-11-10 | 2026-11-10 | 400FS+1d | 224d | 0d | start no earlier than 2026-11-10 |  |  |
| 402 | 1.2.1.4.1.1.2.3 | 3rd deployment 40 % to SIT env on Friday morning of week 2 | 1d | 2026-11-13 | 2026-11-13 | 401FS+2d | 224d | 1d | start no earlier than 2026-11-13 |  |  |
| 403 | 1.2.1.4.1.1.2.4 | 4th deployment 10% to SIT env on Tuesday morning of week 3 | 1d | 2026-11-17 | 2026-11-17 | 402FS+1d | 223d | 0d | start no earlier than 2026-11-17 |  |  |
| 404 | 1.2.1.4.1.1.2.5 | The last deployment (adhoc) on Thursaday and Friday of week 3 | 2d | 2026-11-19 | 2026-11-20 | 403FS+1d | 223d |  | start no earlier than 2026-07-09 |  |  |
| 405 | 1.2.1.4.1.2 | **Sprint 2** | 15d | 2026-11-23 | 2026-12-11 |  | 223d | 0d |  |  | 80h |
| 406 | 1.2.1.4.1.2.1 | **Scrum 1 - WSTF06** | 15d | 2026-11-23 | 2026-12-11 |  | 223d |  |  |  | 80h |
| 407 | 1.2.1.4.1.2.1.1 | Design, Development & Unit Testing | 10d | 2026-11-23 | 2026-12-04 | 392 | 223d | 0d | start no earlier than 2026-11-02 |  |  |
| 408 | 1.2.1.4.1.2.1.2 | Prepare Sprint test cases | 10d | 2026-11-23 | 2026-12-04 | 392 | 223d | 0d | start no earlier than 2026-11-02 |  |  |
| 409 | 1.2.1.4.1.2.1.3 | Execute Sprint test cases | 10d | 2026-11-30 | 2026-12-11 | 408FS-5d | 223d | 0d | start no earlier than 2026-06-29 |  |  |
| 410 | 1.2.1.4.1.2.1.4 | Configuration | 10d | 2026-11-30 | 2026-12-11 | 408FS-5d | 223d |  | start no earlier than 2026-11-03 | FIS | 80h |
| 411 | 1.2.1.4.1.2.1.5 | Demo + On the Job Training for Deliverables of Sprint 1 | 1d | 2026-12-11 | 2026-12-11 | 409FF | 223d |  | start no earlier than 2025-06-06 |  |  |
| 412 | 1.2.1.4.1.2.2 | **Deployment for testing** | 11d | 2026-11-27 | 2026-12-11 |  | 223d |  |  |  |  |
| 413 | 1.2.1.4.1.2.2.1 | The first deployment 20 % to SIT env on Friday morning of week 1 | 1d | 2026-11-27 | 2026-11-27 | 407SS+4d | 223d | 0d | start no earlier than 2026-06-26 |  |  |
| 414 | 1.2.1.4.1.2.2.2 | The second deployment 30% to SIT env on Tuesday morning of week 2 | 1d | 2026-12-01 | 2026-12-01 | 413FS+1d | 223d | 0d | start no earlier than 2026-11-10 |  |  |
| 415 | 1.2.1.4.1.2.2.3 | 3rd deployment 40 % to SIT env on Friday morning of week 2 | 1d | 2026-12-04 | 2026-12-04 | 414FS+2d | 223d | 0d | start no earlier than 2026-11-13 |  |  |
| 416 | 1.2.1.4.1.2.2.4 | 4th deployment 10% to SIT env on Tuesday morning of week 3 | 1d | 2026-12-08 | 2026-12-08 | 415FS+1d | 223d | 0d | start no earlier than 2026-11-17 |  |  |
| 417 | 1.2.1.4.1.2.2.5 | The last deployment (adhoc) on Thursaday and Friday of week 3 | 2d | 2026-12-10 | 2026-12-11 | 416FS+1d | 223d |  | start no earlier than 2026-07-09 |  |  |

Notes:
- 390: Comments: BIDC: 1.check Sprint again -> reduce Sprint => start Sprint 1 from 1-oct-2026.
- 391: Comments: (FIS Updated) BIDC: 2.When scheduling, please take into account the holiday schedules for Vietnamese and Cambodian New Year, as well as the LVB core system Go-Live schedule.

| ID | WBS | Task | Duration | Start | Finish | Predecessors | Total slack | Free slack | Constraint | Resources | Work | Comments |
| --- | --- | --- | --- | --- | --- | --- | --- | --- | --- | --- | --- | --- |
| 418 | 1.2.1.4.1.3 | **Sprint 3** | 17d | 2026-12-14 | 2027-01-05 |  | 223d | 0d |  |  | 80h | (FIS Updated) 14/15/16-4 Tet's Cam |
| 419 | 1.2.1.4.1.3.1 | **Scrum 1 - WSTF05** | 16d | 2026-12-14 | 2027-01-04 |  | 223d |  |  |  | 80h |  |
| 420 | 1.2.1.4.1.3.1.1 | Design, Development & Unit Testing | 11d | 2026-12-14 | 2026-12-28 | 405 | 223d | 0d | start no earlier than 2026-11-02 |  |  |  |
| 421 | 1.2.1.4.1.3.1.2 | Prepare Sprint test cases | 11d | 2026-12-14 | 2026-12-28 | 405 | 224d | 0d | start no earlier than 2026-11-02 |  |  |  |
| 422 | 1.2.1.4.1.3.1.3 | Execute Sprint test cases | 10d | 2026-12-22 | 2027-01-04 | 421FS-5d | 224d | 0d | start no earlier than 2026-06-29 |  |  |  |
| 423 | 1.2.1.4.1.3.1.4 | Configuration | 10d | 2026-12-22 | 2027-01-04 | 421FS-5d | 224d |  | start no earlier than 2026-11-03 | FIS | 80h |  |
| 424 | 1.2.1.4.1.3.1.5 | Demo + On the Job Training for Deliverables of Sprint 1 | 1d | 2027-01-04 | 2027-01-04 | 422FF | 224d |  | start no earlier than 2025-06-06 |  |  |  |
| 425 | 1.2.1.4.1.3.2 | **Deployment for testing** | 13d | 2026-12-18 | 2027-01-05 |  | 223d |  |  |  |  |  |
| 426 | 1.2.1.4.1.3.2.1 | The first deployment 20 % to SIT env on Friday morning of week 1 | 1d | 2026-12-18 | 2026-12-18 | 420SS+4d | 223d | 0d | start no earlier than 2026-06-26 |  |  |  |
| 427 | 1.2.1.4.1.3.2.2 | The second deployment 30% to SIT env on Tuesday morning of week 2 | 1d | 2026-12-22 | 2026-12-22 | 426FS+1d | 223d | 0d | start no earlier than 2026-11-10 |  |  |  |
| 428 | 1.2.1.4.1.3.2.3 | 3rd deployment 40 % to SIT env on Friday morning of week 2 | 2d | 2026-12-25 | 2026-12-28 | 427FS+2d | 223d | 0d | start no earlier than 2026-11-13 |  |  |  |
| 429 | 1.2.1.4.1.3.2.4 | 4th deployment 10% to SIT env on Tuesday morning of week 3 | 1d | 2026-12-30 | 2026-12-30 | 428FS+1d | 223d | 0d | start no earlier than 2026-11-17 |  |  |  |
| 430 | 1.2.1.4.1.3.2.5 | The last deployment (adhoc) on Thursday and Friday of week 3 | 2d | 2027-01-04 | 2027-01-05 | 429FS+2d | 223d |  | start no earlier than 2026-07-09 |  |  |  |
| 431 | 1.2.1.4.1.4 | **Sprint 4** | 15d | 2027-01-06 | 2027-01-26 |  | 223d | 0d |  |  | 80h |  |
| 432 | 1.2.1.4.1.4.1 | **Scrum 1 - WSTF04** | 15d | 2027-01-06 | 2027-01-26 |  | 223d |  |  |  | 80h |  |
| 433 | 1.2.1.4.1.4.1.1 | Design, Development & Unit Testing | 10d | 2027-01-06 | 2027-01-19 | 418 | 223d | 0d | start no earlier than 2026-11-02 |  |  |  |
| 434 | 1.2.1.4.1.4.1.2 | Prepare Sprint test cases | 10d | 2027-01-06 | 2027-01-19 | 418 | 223d | 0d | start no earlier than 2026-11-02 |  |  |  |
| 435 | 1.2.1.4.1.4.1.3 | Execute Sprint test cases | 10d | 2027-01-13 | 2027-01-26 | 434FS-5d | 223d | 0d | start no earlier than 2026-06-29 |  |  |  |
| 436 | 1.2.1.4.1.4.1.4 | Configuration | 10d | 2027-01-13 | 2027-01-26 | 434FS-5d | 223d |  | start no earlier than 2026-11-03 | FIS | 80h |  |
| 437 | 1.2.1.4.1.4.1.5 | Demo + On the Job Training for Deliverables of Sprint 1 | 1d | 2027-01-26 | 2027-01-26 | 435FF | 223d |  | start no earlier than 2025-06-06 |  |  |  |
| 438 | 1.2.1.4.1.4.2 | **Deployment for testing** | 11d | 2027-01-12 | 2027-01-26 |  | 223d |  |  |  |  |  |
| 439 | 1.2.1.4.1.4.2.1 | The first deployment 20 % to SIT env on Friday morning of week 1 | 1d | 2027-01-12 | 2027-01-12 | 433SS+4d | 223d | 0d | start no earlier than 2026-06-26 |  |  |  |
| 440 | 1.2.1.4.1.4.2.2 | The second deployment 30% to SIT env on Tuesday morning of week 2 | 1d | 2027-01-14 | 2027-01-14 | 439FS+1d | 223d | 0d | start no earlier than 2026-11-10 |  |  |  |
| 441 | 1.2.1.4.1.4.2.3 | 3rd deployment 40 % to SIT env on Friday morning of week 2 | 1d | 2027-01-19 | 2027-01-19 | 440FS+2d | 223d | 0d | start no earlier than 2026-11-13 |  |  |  |
| 442 | 1.2.1.4.1.4.2.4 | 4th deployment 10% to SIT env on Tuesday morning of week 3 | 1d | 2027-01-21 | 2027-01-21 | 441FS+1d | 223d | 0d | start no earlier than 2026-11-17 |  |  |  |
| 443 | 1.2.1.4.1.4.2.5 | The last deployment (adhoc) on Thursaday and Friday of week 3 | 2d | 2027-01-25 | 2027-01-26 | 442FS+1d | 223d |  | start no earlier than 2026-07-09 |  |  |  |

| ID | WBS | Task | Type | Duration | Start | Finish | Predecessors | Total slack | Free slack | Constraint | Resources | Work | Deliverables |
| --- | --- | --- | --- | --- | --- | --- | --- | --- | --- | --- | --- | --- | --- |
| 444 | 1.2.1.4.1.5 | **Sprint 5** |  | 21d | 2027-01-27 | 2027-02-24 |  | 220d |  |  |  | 144h |  |
| 445 | 1.2.1.4.1.5.1 | **Scrum 1 - WSTF0** |  | 21d | 2027-01-27 | 2027-02-24 |  | 220d |  |  |  | 144h |  |
| 446 | 1.2.1.4.1.5.1.1 | Design, Development & Unit Testing |  | 18d | 2027-01-27 | 2027-02-19 | 431 | 223d | 0d | finish no earlier than 2027-02-17 |  |  |  |
| 447 | 1.2.1.4.1.5.1.2 | Prepare Sprint test cases |  | 18d | 2027-01-27 | 2027-02-19 | 431 | 223d |  | start no earlier than 2027-01-25 |  |  |  |
| 448 | 1.2.1.4.1.5.1.3 | Execute Sprint test cases |  | 18d | 2027-02-01 | 2027-02-24 |  | 220d | 0d | finish no earlier than 2027-02-24 |  |  |  |
| 449 | 1.2.1.4.1.5.1.4 | Configuration |  | 18d | 2027-02-01 | 2027-02-24 |  | 220d |  | finish no earlier than 2027-02-24 | FIS | 144h |  |
| 450 | 1.2.1.4.1.5.1.5 | Demo + On the Job Training for Deliverables of Sprint 1 |  | 1d | 2027-02-24 | 2027-02-24 | 448FF | 220d |  | start no earlier than 2025-06-06 |  |  |  |
| 451 | 1.2.1.4.1.5.2 | **Deployment for testing** |  | 17d | 2027-02-02 | 2027-02-24 |  | 220d |  |  |  |  |  |
| 452 | 1.2.1.4.1.5.2.1 | The first deployment 20 % to SIT env on Friday morning of week 1 |  | 1d | 2027-02-02 | 2027-02-02 | 446SS+4d | 234d | 0d | start no earlier than 2026-06-26 |  |  |  |
| 453 | 1.2.1.4.1.5.2.2 | The second deployment 30% to SIT env on Tuesday morning of week 2 |  | 1d | 2027-02-04 | 2027-02-04 | 452FS+1d | 234d |  | start no earlier than 2026-11-10 |  |  |  |
| 454 | 1.2.1.4.1.5.2.3 | 3rd deployment 40 % to SIT env on Friday morning of week 2 |  | 1d | 2027-02-17 | 2027-02-17 |  | 220d | 0d | start no earlier than 2027-02-17 |  |  |  |
| 455 | 1.2.1.4.1.5.2.4 | 4th deployment 10% to SIT env on Tuesday morning of week 3 |  | 1d | 2027-02-19 | 2027-02-19 | 454FS+1d | 220d | 0d | start no earlier than 2026-11-17 |  |  |  |
| 456 | 1.2.1.4.1.5.2.5 | The last deployment (adhoc) on Thursaday and Friday of week 3 |  | 2d | 2027-02-23 | 2027-02-24 | 455FS+1d | 220d |  | start no earlier than 2026-07-09 |  |  |  |
| 457 | 1.2.1.5 | Training for TF (on job training during workshops conduct) |  | 84d | 2026-11-02 | 2027-02-24 | 390SS | 220d |  | start no earlier than 2026-06-01 | FIS | 672h |  |
| 458 | 1.2.1.6 | **Drop Delivery for UAT following the Profile Core Drop Schedule** |  | 132d | 2026-09-30 | 2027-03-29 |  | 174d |  |  | FIS | 384h | To be agreed with BIDC |
| 459 | 1.2.1.6.1 | 1st Drop Delivery | milestone | 0d | 2026-09-30 | 2026-09-30 |  | 174d | 0d | start no earlier than 2026-09-30 |  |  |  |
| 460 | 1.2.1.6.2 | 2nd Drop Delivery | milestone | 0d | 2026-10-14 | 2026-10-14 | 459FS+11d | 174d | 0d | start no earlier than 2026-08-14 |  |  |  |
| 461 | 1.2.1.6.3 | 3rd Drop Delivery | milestone | 0d | 2026-10-28 | 2026-10-28 | 460FS+10d | 174d | 0d | start no earlier than 2026-08-28 |  |  |  |
| 462 | 1.2.1.6.4 | 4th Drop Delivery | milestone | 0d | 2026-11-11 | 2026-11-11 | 461FS+10d | 174d | 0d | start no earlier than 2026-09-11 |  |  |  |
| 463 | 1.2.1.6.5 | 5th Drop Delivery | milestone | 0d | 2026-11-25 | 2026-11-25 | 462FS+11d | 174d | 0d | start no earlier than 2026-11-24 |  |  |  |
| 464 | 1.2.1.6.6 | 6th Drop Delivery | milestone | 0d | 2026-12-09 | 2026-12-09 | 463FS+10d | 174d | 0d | start no earlier than 2026-10-09 |  |  |  |
| 465 | 1.2.1.6.7 | 7th Drop Delivery | milestone | 0d | 2026-12-23 | 2026-12-23 | 464FS+10d | 193d | 0d | start no earlier than 2026-10-23 |  |  |  |
| 466 | 1.2.1.6.8 | 8th Drop Delivery | milestone | 0d | 2027-01-06 | 2027-01-06 | 465FS+10d | 193d | 0d | start no earlier than 2026-11-06 |  |  |  |
| 467 | 1.2.1.6.9 | 9th Drop Delivery | milestone | 0d | 2027-01-20 | 2027-01-20 | 466FS+10d | 193d | 0d | start no earlier than 2026-11-20 |  |  |  |
| 468 | 1.2.1.6.10 | 10th Drop Delivery | milestone | 0d | 2027-02-03 | 2027-02-03 | 467FS+10d | 193d | 0d |  |  |  |  |
| 469 | 1.2.1.6.11 | 11th Drop Delivery | milestone | 0d | 2027-02-17 | 2027-02-17 | 468FS+10d | 193d | 0d |  |  |  |  |
| 470 | 1.2.1.6.12 | 12th Drop Delivery | milestone | 0d | 2027-03-01 | 2027-03-01 | 469FS+10d | 193d | 0d |  |  |  |  |
| 471 | 1.2.1.6.13 | 13th Drop Delilvery | milestone | 0d | 2027-03-15 | 2027-03-15 | 470FS+10d | 193d | 0d |  |  |  |  |
| 472 | 1.2.1.6.14 | 14th Drop Delivery | milestone | 0d | 2027-03-29 | 2027-03-29 | 471FS+10d | 193d | 0d |  |  |  |  |

Notes:
- 444: Comments: (FIS Updated) Tet's holiday in Viet 3- Feb -> 13-Feb
- 458: Comments: BIDC: Please review the delivery service for the UAT drop; it is currently displaying the delivery list from the core profile. Note that Drop 1 is scheduled to begin in November.
- 464: TF will align with and follow the Profile Core drop delivery schedule. / Comments: 1st Drop Delivery for TF with Sprint 1 & partial 2 Scope
- 465: Comments: FIS check again with Drop 1
- 467: TF will align with and follow the Profile Core drop delivery schedule.
- 468: TF will align with and follow the Profile Core drop delivery schedule.
- 470: TF will align with and follow the Profile Core drop delivery schedule.

| ID | WBS | Task | Type | Duration | Start | Finish | Predecessors | Total slack | Free slack | Constraint | Resources | Work | Deliverables |
| --- | --- | --- | --- | --- | --- | --- | --- | --- | --- | --- | --- | --- | --- |
| 473 | 1.2.1.7 | **Configuration for UAT Drop testing** |  | 134d | 2026-09-30 | 2027-03-31 |  | 193d |  |  |  |  | To be agreed with BIDC |
| 474 | 1.2.1.7.1 | Configuration Updates 1 |  | 2d | 2026-09-30 | 2026-10-01 | 459 | 325d |  |  |  |  |  |
| 475 | 1.2.1.7.2 | Configuration Updates 2 |  | 2d | 2026-10-15 | 2026-10-16 | 460 | 314d |  |  |  |  |  |
| 476 | 1.2.1.7.3 | Configuration Updates 3 |  | 2d | 2026-10-29 | 2026-10-30 | 461 | 304d |  |  |  |  |  |
| 477 | 1.2.1.7.4 | Configuration Updates 4 |  | 2d | 2026-11-12 | 2026-11-13 | 462 | 294d |  |  |  |  |  |
| 478 | 1.2.1.7.5 | Configuration Updates 5 |  | 2d | 2026-11-26 | 2026-11-27 | 463 | 283d |  |  |  |  |  |
| 479 | 1.2.1.7.6 | Configuration Updates 6 |  | 2d | 2026-12-10 | 2026-12-11 | 464 | 273d |  |  |  |  |  |
| 480 | 1.2.1.7.7 | Configuration Updates 7 |  | 2d | 2026-12-24 | 2026-12-25 | 465 | 263d |  |  |  |  |  |
| 481 | 1.2.1.7.8 | Configuration Updates 8 |  | 2d | 2027-01-07 | 2027-01-08 | 466 | 253d |  |  |  |  |  |
| 482 | 1.2.1.7.9 | Configuration Updates 9 |  | 2d | 2027-01-21 | 2027-01-22 | 467 | 243d |  |  |  |  |  |
| 483 | 1.2.1.7.10 | Configuration Updates 10 |  | 2d | 2027-02-04 | 2027-02-05 | 468 | 233d |  |  |  |  |  |
| 484 | 1.2.1.7.11 | Configuration Updates 11 |  | 2d | 2027-02-18 | 2027-02-19 | 469 | 223d |  |  |  |  |  |
| 485 | 1.2.1.7.12 | Configuration Updates 12 |  | 2d | 2027-03-02 | 2027-03-03 | 470 | 213d |  |  |  |  |  |
| 486 | 1.2.1.7.13 | Configuration Updates 13 |  | 2d | 2027-03-16 | 2027-03-17 | 471 | 203d |  |  |  |  |  |
| 487 | 1.2.1.7.14 | Configuration Updates 14 |  | 2d | 2027-03-30 | 2027-03-31 | 472 | 193d |  |  |  |  |  |
| 488 | 1.2.1.8 | **User Acceptance Testing (TF)** |  | 93d | 2026-12-10 | 2027-04-15 |  | 174d |  |  | FIS | 1488h |  |
| 489 | 1.2.1.8.1 | Support User Acceptance for Trade Finance |  | 93d | 2026-12-10 | 2027-04-15 | 464 | 174d | 41d | finish no earlier than 2026-12-31 | FIS | 744h |  |
| 490 | 1.2.1.9 | **Pilot, DR, HA Support** |  | 77d | 2027-03-01 | 2027-06-11 |  | 0d |  |  | FIS; BIDC | 2240h |  |
| 491 | 1.2.1.9.1 | **Support Pilot** |  | 15d | 2027-05-03 | 2027-05-21 |  | 0d |  |  | FIS | 120h |  |
| 492 | 1.2.1.9.1.1 | Pilot 1 | manual | 5d | 2027-05-03 | 2027-05-07 |  |  |  | start no earlier than 2027-05-03 |  |  |  |
| 493 | 1.2.1.9.1.2 | Pilot 2 | manual | 5d | 2027-05-17 | 2027-05-21 | 492FS+13860emin |  |  | start no earlier than 2027-05-17 |  |  |  |
| 494 | 1.2.1.9.2 | **Support Dress Rehearsal** |  | 10d | 2027-05-24 | 2027-06-04 |  | 0d |  |  | FIS | 80h |  |
| 495 | 1.2.1.9.2.1 | Dress Rehearsal 1 | manual | 3d | 2027-05-24 | 2027-05-26 |  |  |  | start no earlier than 2027-05-24 |  |  |  |
| 496 | 1.2.1.9.2.2 | Dress Rehearsal 2 | manual | 3d | 2027-06-02 | 2027-06-04 | 495FS+9540emin |  |  | start no earlier than 2027-06-02 |  |  |  |

Notes:
- 473: Comments: (FIS Updated) BIDC: Clearly label this information as the configuration for UAT Drop Testing to clarify that it is not the configuration schedule for the entire TF module.
- 488: Comments: BIDC: Checking the UAT Testing information, we started from Drop 1.
- 489: Currently we are assuming that UAT will start after 3 sprint completion

| ID | WBS | Task | Type | Duration | Start | Finish | Predecessors | Complete | Remaining | Total slack | Free slack | Constraint | Resources | Work | Deliverables |
| --- | --- | --- | --- | --- | --- | --- | --- | --- | --- | --- | --- | --- | --- | --- | --- |
| 497 | 1.2.1.9.3 | **Support Non-Functional Test (Performance, Security)** |  | 47d | 2027-03-01 | 2027-04-30 |  |  |  | 0d |  |  | FIS | 376h |  |
| 498 | 1.2.1.9.3.1 | Performance Testing | manual | 47d | 2027-03-01 | 2027-04-30 |  |  |  |  |  | start no earlier than 2027-03-01 |  |  |  |
| 499 | 1.2.1.9.3.2 | Security Test | manual | 23d | 2027-03-01 | 2027-03-31 | 498SS |  |  |  |  | start no earlier than 2027-03-01 |  |  |  |
| 500 | 1.2.1.9.3.3 | Operational Readiness Test (ORT) | manual | 11d | 2027-04-01 | 2027-04-15 | 499FS+900emin |  |  |  |  | start no earlier than 2027-04-01 |  |  |  |
| 501 | 1.2.1.9.4 | **Support HA/DR Test** |  | 54d | 2027-04-01 | 2027-06-11 |  |  |  | 0d |  |  | FIS | 432h |  |
| 502 | 1.2.1.9.4.1 | Develop HA, DR detail plan and execution playbook | manual | 54d | 2027-04-01 | 2027-06-11 |  |  |  |  |  | start no earlier than 2027-04-01 |  |  |  |
| 503 | 1.2.1.9.4.2 | DRP testing | manual | 49d | 2027-04-01 | 2027-06-04 | 502SS |  |  |  |  | start no earlier than 2027-04-01 |  |  |  |
| 504 | 1.2.1.9.4.3 | HA testing | manual | 2d | 2027-06-10 | 2027-06-11 | 503FS+8100emin |  |  |  |  | start no earlier than 2027-06-10 |  |  |  |
| 505 | 1.2.1.9.5 | Dress Drehearsal | manual | 1d? | 2027-03-01 | 2027-03-01 |  |  |  |  |  |  |  |  |  |
| 506 | 1.2.1.10 | **Go Live Support (Core, TF, TR)** |  | 141d | 2027-06-10 | 2027-12-20 |  |  |  | 0d |  |  | FIS; BIDC | 3376h |  |
| 507 | 1.2.1.10.1 | Support BIDC in the Preparation for Golive |  | 8d | 2027-06-10 | 2027-06-18 | 489 |  |  | 133d |  | start no earlier than 2027-06-10 | FIS | 64h |  |
| 508 | 1.2.1.10.2 | Go Live |  | 1d | 2027-06-19 | 2027-06-19 |  |  |  | 0d |  | start no earlier than 2027-06-19 | FIS | 8h |  |
| 509 | 1.2.1.10.3 | Support Post Go Live including Warranty |  | 132d | 2027-06-20 | 2027-12-20 | 508 |  |  | 0d |  | start no earlier than 2027-06-20 | FIS | 1056h | Including 6 months warranty |
| 510 | 1.3 | **III. BIDC Quantum Implementation** |  | 280d | 2026-08-03 A | 2027-08-16 |  | 1% | 276.83d | 90d |  |  |  | 5088h |  |
| 511 | 1.3.1 | Kick Off meeting | milestone, manual | 1d | 2026-08-19 A | 2026-08-19 |  |  | 1d |  |  |  |  |  |  |
| 512 | 1.3.2 | **Pre-Requisites** |  | 11d | 2026-08-03 A | 2026-08-17 |  | 49% | 5.6d | 3.5d |  |  |  |  |  |
| 513 | 1.3.2.1 | BIDC Environment Readiness (Dev; SIT + UAT ) |  | 6d | 2026-08-03 A | 2026-08-10 |  | 90% | 0.6d | 3.5d | 0d | start no earlier than 2026-08-03 |  |  |  |
| 514 | 1.3.2.2 | VPN Access for FIS Consultants |  | 5d | 2026-08-11 | 2026-08-17 | 513 |  |  | 3.5d | 0d |  |  |  |  |
| 515 | 1.3.3 | **TECHNICAL INSTALLATION** |  | 8d | 2026-08-18 A | 2026-08-27 |  | 44% | 4.5d | -1d | 0d |  |  |  |  |
| 516 | 1.3.3.1 | **Dev + SIT/UAT server** |  | 8d | 2026-08-18 A | 2026-08-27 |  | 44% | 4.5d | -1d | 0d |  |  |  |  |
| 517 | 1.3.3.1.1 | Setup Dev + SIT/UAT environment |  | 7d | 2026-08-18 A | 2026-08-26 | 513, 514 | 50% | 3.5d | -349d | 0d |  |  |  |  |
| 518 | 1.3.3.1.2 | Dev + SIT/UAT Server ready |  | 1d | 2026-08-27 | 2026-08-27 | 517 |  |  | -349d | 0d |  |  |  |  |
| 519 | 1.3.4 | **DESIGN** |  | 19d | 2026-08-28 | 2026-09-22 |  |  |  | -349d | 0d |  |  | 744h |  |
| 520 | 1.3.4.1 | **Solution Workshop** |  | 8d | 2026-08-28 | 2026-09-07 |  |  |  | -349d | 0d |  |  | 64h |  |
| 521 | 1.3.4.1.1 | Workshop 1 - Static data |  | 1d | 2026-08-28 | 2026-08-28 | 518 |  |  | -349d | 0d |  | Ranjitha | 8h |  |
| 522 | 1.3.4.1.2 | Workshop 2 - Front Office |  | 1d | 2026-08-30 | 2026-08-30 | 521 |  |  | -349d | 0d |  | Ranjitha | 8h |  |
| 523 | 1.3.4.1.3 | Workshop 3 - Back Office |  | 1d | 2026-08-31 | 2026-08-31 | 522 |  |  | -349d | 0d |  | Ranjitha | 8h |  |
| 524 | 1.3.4.1.4 | Workshop 4 - Cash Management |  | 1d | 2026-09-01 | 2026-09-01 | 523 |  |  | -349d | 0d |  | Ranjitha | 8h |  |
| 525 | 1.3.4.1.5 | Workshop 5 - Risk Management&Compliance |  | 1d | 2026-09-02 | 2026-09-02 | 524 |  |  | -349d | 0d |  | Sushma | 8h |  |
| 526 | 1.3.4.1.6 | Workshop 6 - Reports and Interface |  | 1d | 2026-09-03 | 2026-09-03 | 525 |  |  | -349d | 0d |  | Ranjitha | 8h |  |
| 527 | 1.3.4.1.7 | Workshop 7 - EWF Components (Technical) |  | 1d | 2026-09-04 | 2026-09-04 | 526 |  |  | 343d | 0d |  | Ranjitha | 8h |  |
| 528 | 1.3.4.1.8 | Workshop 8 - Interfaces |  | 1d | 2026-09-07 | 2026-09-07 | 527 |  |  | 343d |  |  | Ranjitha | 8h |  |

Notes:
- 507: Comments: (FIS updated) Revise the Preparation details to cover the Go-Live phase only. Consequently, a separate support task needs to be added for BIDC's Pilot, DR, and HA activities.
- 520: BIDC: Reschedule to an earlier time in 19-August

| ID | WBS | Task | Type | Duration | Start | Finish | Predecessors | Total slack | Free slack | Constraint | Resources | Work |
| --- | --- | --- | --- | --- | --- | --- | --- | --- | --- | --- | --- | --- |
| 529 | 1.3.4.2 | **Design Documentation** |  | 17d | 2026-08-30 | 2026-09-21 |  | -349d | 0d |  |  | 672h |
| 530 | 1.3.4.2.1 | Draft Design Document - Static Data |  | 2d | 2026-08-30 | 2026-08-31 | 521 | -344d | 0d |  | Tennison; Ranjitha | 32h |
| 531 | 1.3.4.2.2 | Review Design Document - Static Data |  | 8d | 2026-09-01 | 2026-09-10 | 530 | -344d | 0d |  | BIDC | 64h |
| 532 | 1.3.4.2.3 | Update Design Document for review comments (if any) - Static Data |  | 2d | 2026-09-11 | 2026-09-14 | 531 | -344d | 0d |  | Tennison | 16h |
| 533 | 1.3.4.2.4 | Draft Design Document - Front Office |  | 2d | 2026-08-31 | 2026-09-01 | 522 | -345d | 0d |  | Tennison; Ranjitha | 32h |
| 534 | 1.3.4.2.5 | Review Design Document - Front Office |  | 8d | 2026-09-02 | 2026-09-11 | 533 | -345d | 0d |  | BIDC | 64h |
| 535 | 1.3.4.2.6 | Update Design Document for review comments (if any) - Front Office |  | 2d | 2026-09-14 | 2026-09-15 | 534 | -345d | 0d |  | Tennison | 16h |
| 536 | 1.3.4.2.7 | Draft Design Document - Back Office |  | 2d | 2026-09-01 | 2026-09-02 | 523 | -346d | 0d |  | Tennison; Ranjitha | 32h |
| 537 | 1.3.4.2.8 | Review Design Document - Back Office |  | 8d | 2026-09-03 | 2026-09-14 | 536 | -346d | 0d |  | BIDC | 64h |
| 538 | 1.3.4.2.9 | Update Design Document for review comments (if any) - Back Office |  | 2d | 2026-09-15 | 2026-09-16 | 537 | -346d | 0d |  | Tennison | 16h |
| 539 | 1.3.4.2.10 | Draft Design Document - Cash Management |  | 2d | 2026-09-02 | 2026-09-03 | 524 | -347d | 0d |  | Tennison; Ranjitha | 32h |
| 540 | 1.3.4.2.11 | Review Design Document - Cash Management |  | 8d | 2026-09-04 | 2026-09-15 | 539 | -347d | 0d |  | BIDC | 64h |
| 541 | 1.3.4.2.12 | Update Design Document for review comments (if any) - Cash Management |  | 2d | 2026-09-16 | 2026-09-17 | 540 | -347d | 0d |  | Tennison | 16h |
| 542 | 1.3.4.2.13 | Draft Design Document - Risk Management&Compliance |  | 2d | 2026-09-03 | 2026-09-04 | 525 | -348d | 0d |  | Tennison; Ranjitha | 32h |
| 543 | 1.3.4.2.14 | Review Design Document - Risk Management&Compliance |  | 8d | 2026-09-07 | 2026-09-16 | 542 | -348d | 0d |  | BIDC | 64h |
| 544 | 1.3.4.2.15 | Update Design Document for review comments (if any) - Risk Management&Compliance |  | 2d | 2026-09-17 | 2026-09-18 | 543 | -348d | 0d |  | Tennison | 16h |
| 545 | 1.3.4.2.16 | Draft Design Document - Reports and Interface |  | 2d | 2026-09-04 | 2026-09-07 | 526 | -349d | 0d |  | Tennison; Ranjitha | 32h |
| 546 | 1.3.4.2.17 | Review Design Document - Reports and Interface |  | 8d | 2026-09-08 | 2026-09-17 | 545 | -349d | 0d |  | BIDC | 64h |
| 547 | 1.3.4.2.18 | Update Design Document for review comments (if any) - Reports and Interface |  | 2d | 2026-09-18 | 2026-09-21 | 546 | -349d | 0d |  | Tennison | 16h |
| 548 | 1.3.4.3 | Design Sign Off | milestone | 1d | 2026-09-22 | 2026-09-22 | 529 | -349d | 0d |  | BIDC | 8h |
| 549 | 1.3.5 | BIDC to provide Statc Data Information |  | 5d | 2026-09-23 | 2026-09-29 | 548 | -349d | 0d | start no earlier than 2026-09-02 | BIDC | 40h |
| 550 | 1.3.6 | **SYSTEM BUILD** |  | 76d | 2026-09-30 | 2027-01-12 |  | -349d | 0d |  |  | 3768h |
| 551 | 1.3.6.1 | **SPRINT-1** |  | 15d | 2026-09-30 | 2026-10-20 | 549 | -349d | 0d |  |  | 356h |
| 552 | 1.3.6.1.1 | **Static data import/setup** |  | 7.5d | 2026-09-30 | 2026-10-09 |  | -341.5d | 0d |  |  | 60h |
| 553 | 1.3.6.1.1.1 | Business Structure/Entity |  | 0.5d | 2026-09-30 | 2026-09-30 |  | -341.5d | 0d |  | Hetagna | 4h |
| 554 | 1.3.6.1.1.2 | Currency |  | 0.5d | 2026-09-30 | 2026-09-30 | 553 | -341.5d | 0d |  | Hetagna | 4h |
| 555 | 1.3.6.1.1.3 | Currency Pair |  | 0.5d | 2026-10-01 | 2026-10-01 | 554 | -341.5d | 0d |  | Hetagna | 4h |
| 556 | 1.3.6.1.1.4 | Country |  | 0.5d | 2026-10-01 | 2026-10-01 | 555 | -341.5d | 0d |  | Hetagna | 4h |
| 557 | 1.3.6.1.1.5 | Calendar |  | 0.5d | 2026-10-02 | 2026-10-02 | 556 | -341.5d | 0d |  | Hetagna | 4h |
| 558 | 1.3.6.1.1.6 | Counterparty |  | 0.5d | 2026-10-02 | 2026-10-02 | 557 | -341.5d | 0d |  | Hetagna | 4h |
| 559 | 1.3.6.1.1.7 | Counterparty Type |  | 0.5d | 2026-10-05 | 2026-10-05 | 558 | -341.5d | 0d |  | Hetagna | 4h |
| 560 | 1.3.6.1.1.8 | External Method |  | 0.5d | 2026-10-05 | 2026-10-05 | 559 | -341.5d | 0d |  | Hetagna | 4h |
| 561 | 1.3.6.1.1.9 | Bank Account |  | 0.5d | 2026-10-06 | 2026-10-06 | 560 | -341.5d | 0d |  | Hetagna | 4h |
| 562 | 1.3.6.1.1.10 | Bank Account Rule/Defaults |  | 0.5d | 2026-10-06 | 2026-10-06 | 561 | -341.5d | 0d |  | Hetagna | 4h |
| 563 | 1.3.6.1.1.11 | Counterparty Bank Accounts |  | 0.5d | 2026-10-07 | 2026-10-07 | 562 | -341.5d | 0d |  | Hetagna | 4h |
| 564 | 1.3.6.1.1.12 | User Group |  | 0.5d | 2026-10-07 | 2026-10-07 | 563 | -341.5d | 0d |  | Hetagna | 4h |
| 565 | 1.3.6.1.1.13 | Stock Account |  | 1d | 2026-10-08 | 2026-10-08 | 564 | -341.5d | 0d |  | Hetagna | 8h |
| 566 | 1.3.6.1.1.14 | User |  | 0.5d | 2026-10-09 | 2026-10-09 | 565 | -341.5d | 0d |  | Hetagna | 4h |

Notes:
- 529: BIDC: Reschedule to an earlier time in 19-August
- 533: Comments: This will require update due to extension of discussion to 6/4
- 549: BIDC: Reschedule to an earlier time in 15-Sep

| ID | WBS | Task | Duration | Start | Finish | Predecessors | Total slack | Free slack | Resources | Work |
| --- | --- | --- | --- | --- | --- | --- | --- | --- | --- | --- |
| 567 | 1.3.6.1.2 | **Instrument** | 7d | 2026-09-30 | 2026-10-08 |  | -349d | 0d |  | 56h |
| 568 | 1.3.6.1.2.1 | Forex | 1d | 2026-09-30 | 2026-09-30 |  | -349d | 0d | Hetagna | 8h |
| 569 | 1.3.6.1.2.2 | Money Markets | 1d | 2026-10-01 | 2026-10-01 | 568 | -349d | 0d | Hetagna | 8h |
| 570 | 1.3.6.1.2.3 | Securities | 1d | 2026-10-02 | 2026-10-02 | 569 | -349d | 0d | Hetagna | 8h |
| 571 | 1.3.6.1.2.4 | Repo | 1d | 2026-10-05 | 2026-10-05 | 570 | -349d | 0d | Hetagna | 8h |
| 572 | 1.3.6.1.2.5 | Equity | 1d | 2026-10-06 | 2026-10-06 | 571 | -349d | 0d | Hetagna | 8h |
| 573 | 1.3.6.1.2.6 | Actual Cashflows | 1d | 2026-10-07 | 2026-10-07 | 572 | -341d | 0d | Hetagna | 8h |
| 574 | 1.3.6.1.2.7 | Bank Transfers | 1d | 2026-10-08 | 2026-10-08 | 573 | -341d | 0d | Hetagna | 8h |
| 575 | 1.3.6.1.3 | **Accounting and Valuation** | 15d | 2026-09-30 | 2026-10-20 |  | -349d | 0d |  | 240h |
| 576 | 1.3.6.1.3.1 | Rules set up: Accounting Rules, Posting Rules, Management Rules | 10d | 2026-10-07 | 2026-10-20 | 572 | -349d | 0d | Ranjitha | 80h |
| 577 | 1.3.6.1.3.2 | GL set up | 10d | 2026-09-30 | 2026-10-13 |  | -344d | 0d | Ranjitha | 80h |
| 578 | 1.3.6.1.3.3 | Chart of Account Upload | 10d | 2026-09-30 | 2026-10-13 |  | -344d | 0d | Ranjitha | 80h |
| 579 | 1.3.6.2 | **SPRINT-2** | 15d | 2026-10-21 | 2026-11-10 | 551 | -349d | 0d |  | 680h |
| 580 | 1.3.6.2.1 | **SPRINT-1 Functional Testing** | 15d | 2026-10-21 | 2026-11-10 |  | -349d | 0d |  | 120h |
| 581 | 1.3.6.2.1.1 | Data replication from SIT to BIDC Demo | 1d | 2026-10-21 | 2026-10-21 |  | -349d | 0d | BIDC | 8h |
| 582 | 1.3.6.2.1.2 | Sprint-1 Demo call | 1d | 2026-10-22 | 2026-10-22 | 581 | -349d | 0d | FIS | 8h |
| 583 | 1.3.6.2.1.3 | Sprint-1 Testing, Review | 13d | 2026-10-23 | 2026-11-10 | 582 | -349d | 0d | BIDC-FIS | 104h |
| 584 | 1.3.6.2.2 | **Interfaces** | 15d | 2026-10-21 | 2026-11-10 |  | -349d | 0d |  | 560h |
| 585 | 1.3.6.2.2.1 | GL Interface | 10d | 2026-10-21 | 2026-11-03 |  | -344d | 0d | Ranjitha | 80h |
| 586 | 1.3.6.2.2.2 | MDM | 15d | 2026-10-21 | 2026-11-10 |  | -349d | 0d | Seema | 120h |
| 587 | 1.3.6.2.2.3 | Profile Rates | 15d | 2026-10-21 | 2026-11-10 |  | -349d | 0d | Seema | 120h |
| 588 | 1.3.6.2.2.4 | Confirmations (SWIFT) | 15d | 2026-10-21 | 2026-11-10 |  | -349d | 0d | Hetagna | 120h |
| 589 | 1.3.6.2.2.5 | Electronic Confirmations and Matching | 15d | 2026-10-21 | 2026-11-10 |  | -349d | 0d | Hetagna | 120h |
| 590 | 1.3.6.3 | **SPRINT-3** | 15d | 2026-11-11 | 2026-11-30 |  | -349d | 0d |  | 716h |
| 591 | 1.3.6.3.1 | **SPRINT-2 Functional Testing** | 15d | 2026-11-11 | 2026-11-30 |  | -349d | 0d |  | 120h |
| 592 | 1.3.6.3.1.1 | Data replication from SIT to BIDC Demo | 1d | 2026-11-11 | 2026-11-11 | 579 | -349d | 0d | BIDC | 8h |
| 593 | 1.3.6.3.1.2 | Sprint-2 Demo call | 1d | 2026-11-12 | 2026-11-12 | 592 | -349d | 0d | FIS | 8h |
| 594 | 1.3.6.3.1.3 | Sprint-2 Testing, Review | 13d | 2026-11-13 | 2026-11-30 | 593 | -349d | 0d | BIDC-FIS | 104h |

| ID | WBS | Task | Duration | Start | Finish | Predecessors | Total slack | Free slack | Resources | Work |
| --- | --- | --- | --- | --- | --- | --- | --- | --- | --- | --- |
| 595 | 1.3.6.3.2 | **Interfaces** | 15d | 2026-11-11 | 2026-11-30 |  | -349d | 0d |  | 596h |
| 596 | 1.3.6.3.2.1 | Nostro Deal Interface - Profile | 15d | 2026-11-11 | 2026-11-30 | 579 | -349d | 0d | Ranjitha | 120h |
| 597 | 1.3.6.3.2.2 | Paper Confirmations 1,2 | 15d | 2026-11-11 | 2026-11-30 | 579 | -349d | 0d | Seema | 120h |
| 598 | 1.3.6.3.2.3 | Paper Confirmations 3 | 15d | 2026-11-11 | 2026-11-30 | 579 | -349d | 0d | Seema | 120h |
| 599 | 1.3.6.3.2.4 | Payments (SWIFT) | 15d | 2026-11-11 | 2026-11-30 | 579 | -349d | 0d | Ranjitha | 120h |
| 600 | 1.3.6.3.2.5 | Customer Trade - Profile | 14d | 2026-11-11 | 2026-11-27 | 579 | -348.5d | 0d | Hetagna | 112h |
| 601 | 1.3.6.3.2.6 | Training on confirmation module and Matching confirmation | 0.5d | 2026-11-30 | 2026-11-30 | 600 | -348.5d | 0d | Hetagna | 4h |
| 602 | 1.3.6.4 | **SPRINT-4** | 15d | 2026-12-01 | 2026-12-21 |  | -349d | 0d |  | 1104h |
| 603 | 1.3.6.4.1 | **SPRINT-3 Functional Testing** | 15d | 2026-12-01 | 2026-12-21 |  | -349d | 0d |  | 120h |
| 604 | 1.3.6.4.1.1 | Data replication from SIT to BIDV Demo | 1d | 2026-12-01 | 2026-12-01 | 590 | -349d | 0d | BIDC | 8h |
| 605 | 1.3.6.4.1.2 | Sprint-3 Demo call | 1d | 2026-12-02 | 2026-12-02 | 604 | -349d | 0d | FIS | 8h |
| 606 | 1.3.6.4.1.3 | Sprint-3 Testing, Review | 13d | 2026-12-03 | 2026-12-21 | 605 | -349d | 0d | BIDC-FIS | 104h |
| 607 | 1.3.6.4.2 | **Interfaces** | 15d | 2026-12-01 | 2026-12-21 |  | -349d | 0d |  | 360h |
| 608 | 1.3.6.4.2.1 | Bank Statements | 15d | 2026-12-01 | 2026-12-21 | 590 | -349d | 0d | Ranjitha | 120h |
| 609 | 1.3.6.4.2.2 | Payments (BOL) | 15d | 2026-12-01 | 2026-12-21 | 590 | -349d | 0d | Seema | 120h |
| 610 | 1.3.6.4.2.3 | Accounting Slip | 15d | 2026-12-01 | 2026-12-21 | 590 | -349d | 0d | Hetagna | 120h |
| 611 | 1.3.6.4.3 | **Security & Workflow** | 15d | 2026-12-01 | 2026-12-21 |  | -349d | 0d |  | 600h |
| 612 | 1.3.6.4.3.1 | Module & Resource Security | 15d | 2026-12-01 | 2026-12-21 | 590 | -349d | 0d | Hetagna | 120h |
| 613 | 1.3.6.4.3.2 | Deal Approval Workflow | 15d | 2026-12-01 | 2026-12-21 | 590 | -349d | 0d | Ranjitha | 120h |
| 614 | 1.3.6.4.3.3 | Settlement Approval Workflow | 15d | 2026-12-01 | 2026-12-21 | 590 | -349d | 0d | Ranjitha | 120h |
| 615 | 1.3.6.4.3.4 | Static Data Approval Workflow | 15d | 2026-12-01 | 2026-12-21 | 590 | -349d | 0d | Ranjitha | 120h |
| 616 | 1.3.6.4.3.5 | User Groups Setup | 15d | 2026-12-01 | 2026-12-21 | 590 | -349d | 0d | Ranjitha | 120h |
| 617 | 1.3.6.4.4 | **Training** | 3d | 2026-12-15 | 2026-12-17 |  | -347d | 0d |  | 24h |
| 618 | 1.3.6.4.4.1 | Report Discussion | 0.5d | 2026-12-15 | 2026-12-15 | 590FS+10d | -347d | 0d | Ranjitha | 4h |
| 619 | 1.3.6.4.4.2 | Report Discussion | 0.5d | 2026-12-15 | 2026-12-15 | 618 | -347d | 0d | Ranjitha | 4h |
| 620 | 1.3.6.4.4.3 | Report Discussion | 0.5d | 2026-12-16 | 2026-12-16 | 619 | -347d | 0d | Ranjitha | 4h |
| 621 | 1.3.6.4.4.4 | Report Discussion | 0.5d | 2026-12-16 | 2026-12-16 | 620 | -347d | 0d | Ranjitha | 4h |
| 622 | 1.3.6.4.4.5 | EWF Training | 0.5d | 2026-12-17 | 2026-12-17 | 621 | -347d | 0d | Ranjitha | 4h |
| 623 | 1.3.6.4.4.6 | Bank reconciliation training | 0.5d | 2026-12-17 | 2026-12-17 | 622 | -347d | 0d | Ranjitha | 4h |

| ID | WBS | Task | Type | Duration | Start | Finish | Predecessors | Total slack | Free slack | Constraint | Resources | Work |
| --- | --- | --- | --- | --- | --- | --- | --- | --- | --- | --- | --- | --- |
| 624 | 1.3.6.5 | **SPRINT-5** |  | 15d | 2026-12-22 | 2027-01-11 |  | -349d | 0d |  |  | 912h |
| 625 | 1.3.6.5.1 | **SPRINT-4 Functional Testing** |  | 15d | 2026-12-22 | 2027-01-11 |  | -349d | 0d |  |  | 120h |
| 626 | 1.3.6.5.1.1 | Data replication from SIT to BIDV Demo |  | 1d | 2026-12-22 | 2026-12-22 | 602 | -349d | 0d |  | BIDC | 8h |
| 627 | 1.3.6.5.1.2 | Sprint-4 Demo call |  | 1d | 2026-12-23 | 2026-12-23 | 626 | -349d | 0d |  | FIS | 8h |
| 628 | 1.3.6.5.1.3 | Sprint-4 Testing, Review |  | 13d | 2026-12-24 | 2027-01-11 | 627 | -349d | 0d |  | BIDC-FIS | 104h |
| 629 | 1.3.6.5.2 | **Limit Reports** |  | 15d | 2026-12-22 | 2027-01-11 |  | -349d | 0d |  |  | 792h |
| 630 | 1.3.6.5.2.1 | Valuation Rules |  | 15d | 2026-12-22 | 2027-01-11 | 602 | -349d | 0d |  | Ranjitha | 120h |
| 631 | 1.3.6.5.2.2 | Counterparty Limits |  | 15d | 2026-12-22 | 2027-01-11 | 602 | -349d | 0d |  | Ranjitha | 120h |
| 632 | 1.3.6.5.2.3 | Transaction Limits |  | 15d | 2026-12-22 | 2027-01-11 | 602 | -349d | 0d |  | Ranjitha | 120h |
| 633 | 1.3.6.5.2.4 | Limit definition |  | 15d | 2026-12-22 | 2027-01-11 | 602 | -349d | 0d |  | Ranjitha | 120h |
| 634 | 1.3.6.5.2.5 | Setup email alerts |  | 15d | 2026-12-22 | 2027-01-11 | 602 | -349d | 0d |  | Ranjitha | 120h |
| 635 | 1.3.6.5.2.6 | Training on Limit Report |  | 9d | 2026-12-22 | 2027-01-01 | 602 | -343d | 0d |  | Ranjitha | 72h |
| 636 | 1.3.6.5.2.7 | Post trade save limit checking and email alert |  | 15d | 2026-12-22 | 2027-01-11 | 602 | -349d | 0d |  | Ranjitha | 120h |
| 637 | 1.3.6.6 | Build Complete Milestone | milestone | 1d | 2027-01-12 | 2027-01-12 | 551, 579, 590, 602, 624 | 251d |  |  |  |  |
| 638 | 1.3.7 | **SYSTEM INTEGRATION TESTING** |  | 17d | 2027-01-12 | 2027-02-03 |  | -349d | 0d |  |  | 240h |
| 639 | 1.3.7.1 | Environment preparation |  | 2d | 2027-01-12 | 2027-01-13 | 551, 579, 590, 602, 624 | -349d | 0d | start no earlier than 2026-10-12 |  |  |
| 640 | 1.3.7.2 | SIT execution |  | 15d | 2027-01-14 | 2027-02-03 | 639 | -349d | 0d |  | FIS | 120h |
| 641 | 1.3.7.3 | Support SIT execution |  | 15d | 2027-01-14 | 2027-02-03 | 640SS | -349d | 0d |  | FIS | 120h |
| 642 | 1.3.8 | SIT SignOff | milestone | 1d | 2027-02-04 | 2027-02-04 | 640, 641 | -349d | 0d |  |  |  |
| 643 | 1.3.9 | **BIDC User TRAINING - UAT** |  | 6d | 2027-02-05 | 2027-02-12 |  | 228d |  |  |  |  |
| 644 | 1.3.9.1 | Quantum Presentation & Documentation |  | 0.5d | 2027-02-05 | 2027-02-05 | 642 | 228d | 0d |  |  |  |
| 645 | 1.3.9.2 | Quantum New Users Training |  | 1d | 2027-02-05 | 2027-02-08 | 644 | 228d | 0d |  |  |  |
| 646 | 1.3.9.3 | Building Reports in Quantum (part of the Reports Workshop) |  | 1d | 2027-02-08 | 2027-02-09 | 645 | 228d | 0d |  |  |  |
| 647 | 1.3.9.4 | Enterprise Workflow Reporting |  | 1d | 2027-02-09 | 2027-02-10 | 646 | 228d | 0d |  |  |  |
| 648 | 1.3.9.5 | Dashboards |  | 0.5d | 2027-02-10 | 2027-02-10 | 647 | 228d | 0d |  |  |  |
| 649 | 1.3.9.6 | Building Custom Confirmations |  | 0.5d | 2027-02-11 | 2027-02-11 | 648 | 228d | 0d |  |  |  |
| 650 | 1.3.9.7 | System Admin |  | 0.5d | 2027-02-11 | 2027-02-11 | 649 | 228d | 0d |  |  |  |
| 651 | 1.3.9.8 | SWIFT Message Framework |  | 0.5d | 2027-02-12 | 2027-02-12 | 650 | 228d | 0d |  |  |  |
| 652 | 1.3.9.9 | Provide access to Quantum knowledge centre |  | 0.5d | 2027-02-12 | 2027-02-12 | 651 | 228d |  |  |  |  |

Notes:
- 624: Please take note of the Tet holiday schedule: from 3-Feb to 13-Feb
- 638: Please reschedule because of the Go-live for LVB,change: from 28-Feb to 16- March

| ID | WBS | Task | Type | Duration | Start | Finish | Predecessors | Total slack | Free slack | Constraint | Resources | Work | Deliverables | Number13 | Date10 | Number1 | Number12 |
| --- | --- | --- | --- | --- | --- | --- | --- | --- | --- | --- | --- | --- | --- | --- | --- | --- | --- |
| 653 | 1.3.10 | **USER ACCEPTANCE TEST (UAT)** |  | 33d | 2027-02-05 | 2027-03-19 |  | -349d | 0d |  |  | 240h |  |  |  |  |  |
| 654 | 1.3.10.1 | Environment preparation |  | 3d | 2027-02-05 | 2027-02-09 | 642 | -349d | 0d |  |  |  |  |  |  |  |  |
| 655 | 1.3.10.2 | Execute UAT -Cycle #1 |  | 15d | 2027-02-10 | 2027-02-28 | 654 | -349d | 0d |  | BIDC | 120h | UAT Cycle #1 &#2 |  |  |  |  |
| 656 | 1.3.10.3 | Support UAT - Cycle 1 |  | 15d | 2027-02-10 | 2027-02-28 | 655SS | -349d | 0d |  |  |  |  |  |  |  |  |
| 657 | 1.3.10.4 | Execute UAT -Cycle #2 |  | 15d | 2027-03-01 | 2027-03-19 | 655, 656 | -349d | 0d |  |  |  |  |  |  |  |  |
| 658 | 1.3.10.5 | Support UAT - Cycle 2 |  | 15d | 2027-03-01 | 2027-03-19 | 657SS | -349d | 0d | finish no earlier than 2025-11-28 | FIS | 120h | UAT Cycle #1 &#2 |  |  |  |  |
| 659 | 1.3.11 | UAT SignOff | milestone | 1d | 2027-03-22 | 2027-03-22 | 655, 656, 657, 658 | -349d | 0d |  |  |  |  |  |  |  |  |
| 660 | 1.3.12 | UAT Milestone | milestone | 0d | 2027-03-22 | 2027-03-22 | 659 | 200d |  |  |  |  |  |  |  |  |  |
| 661 | 1.3.13 | **Data Migration** |  | 11d | 2027-03-23 | 2027-04-06 |  | 189d |  |  |  | 40h |  |  |  |  |  |
| 662 | 1.3.13.1 | BIDC to provide outstanding Trade details |  | 5d | 2027-03-23 | 2027-03-29 | 653SS+20d, 659 | 189d | 0d | start no earlier than 2026-12-01 | BIDC | 40h |  |  |  |  |  |
| 663 | 1.3.13.2 | FX (Spot, Forward, Swap) |  | 1d | 2027-03-30 | 2027-03-30 | 662 | 189d | 0d | start no earlier than 2026-07-09 |  |  |  |  |  |  |  |
| 664 | 1.3.13.3 | Money Market (Term Loans, Short Term lending/borrowings, Asset Based Loans (recording the Collateral details, example, Govt. Bonds, Term Deposits) |  | 1d | 2027-03-31 | 2027-03-31 | 663 | 189d | 0d | start no earlier than 2026-07-09 |  |  |  |  |  |  |  |
| 665 | 1.3.13.4 | Cash Transaction |  | 1d | 2027-04-01 | 2027-04-01 | 664 | 189d | 0d | start no earlier than 2026-07-10 |  |  |  |  |  |  |  |
| 666 | 1.3.13.5 | Securities (FRNs, Bonds, Treasury Notes) |  | 1d | 2027-04-02 | 2027-04-02 | 665 | 189d | 0d | start no earlier than 2026-07-13 |  |  |  |  |  |  |  |
| 667 | 1.3.13.6 | Repurchase Agreements |  | 1d | 2027-04-05 | 2027-04-05 | 666 | 189d | 0d | start no earlier than 2026-07-14 |  |  |  |  |  |  |  |
| 668 | 1.3.13.7 | Equities & Mutual Funds |  | 1d | 2027-04-06 | 2027-04-06 | 667 | 189d |  | start no earlier than 2026-07-15 |  |  |  |  |  |  |  |
| 669 | 1.3.14 | **Go Live Readiness** |  | 47d | 2027-04-22 | 2027-06-21 |  |  |  |  |  | 16h |  |  |  |  |  |
| 670 | 1.3.14.1 | **FIS Quantum Go-Live Prep** |  | 28d | 2027-04-22 | 2027-05-27 |  | -371d | 0d |  |  |  |  |  |  |  |  |
| 671 | 1.3.14.1.1 | Cutover planning and review |  | 10d | 2027-04-22 | 2027-05-03 | 659 | -371d | 0d |  |  |  |  | -4800 |  |  |  |
| 672 | 1.3.14.1.2 | Cutover Approach Approval |  | 2d | 2027-05-04 | 2027-05-05 | 671 | 150d | 0d |  |  |  |  | -4800 |  |  |  |
| 673 | 1.3.14.1.3 | Runbook preparation & finalization |  | 14d | 2027-05-06 | 2027-05-25 | 672 | 150d | 0d |  |  |  |  | -9600 | 2024-02-22 | -573.38 | -239 |
| 674 | 1.3.14.1.4 | Go-Live BIDC/Approvals |  | 2d | 2027-05-26 | 2027-05-27 | 673 | 150d |  |  |  |  |  | -960 | 2024-02-22 | -573.38 | -242 |
| 675 | 1.3.14.2 | **Technical Installation - Prod** |  | 24d | 2027-05-04 | 2027-06-04 |  | -371d | 0d |  |  | 16h |  |  |  |  |  |
| 676 | 1.3.14.2.1 | Server Set-Up & Hardening |  | 1d | 2027-05-04 | 2027-05-04 | 671 | -371d | 0d | start no earlier than 2025-09-29 |  |  |  | -480 | 2024-02-22 | -573.38 | -212 |
| 677 | 1.3.14.2.2 | Database refresh and technical installation |  | 1d | 2027-05-05 | 2027-05-05 | 676 | -371d | 0d |  |  |  |  | -480 | 2024-02-22 | -573.38 | -242 |
| 678 | 1.3.14.2.3 | Set-up Production environment - Quantum |  | 1d | 2027-05-06 | 2027-05-06 | 677 | -371d | 0d |  | FIS | 8h |  | -480 | 2024-02-22 | -573.38 | -244 |
| 679 | 1.3.14.2.4 | Set-up a copy of the database in Production |  | 1d | 2027-05-07 | 2027-05-07 | 678 | 13d | 0d |  | FIS | 8h |  | -480 | 2024-02-22 | -573.38 | -246 |
| 680 | 1.3.14.2.5 | Test Interface SFTP setup, Scheduler Jobs |  | 1d | 2027-05-10 | 2027-05-10 | 679 | 13d | 9d |  |  |  |  | -480 | 2024-02-22 | -573.38 | -254 |
| 681 | 1.3.14.2.6 | Dress Rehearsal 1 Support | manual | 3d | 2027-05-24 | 2027-05-26 | 680 |  |  |  |  |  |  |  |  |  |  |
| 682 | 1.3.14.2.7 | Dress Rehearsal 2 Support | manual | 3d | 2027-06-02 | 2027-06-04 | 681 |  |  |  |  |  |  |  |  |  |  |
| 683 | 1.3.14.2.8 | Production Installation Complete | milestone | 0d | 2027-06-04 | 2027-06-04 | 680, 681, 682 | 0d |  |  |  |  |  |  | 2024-02-22 | -573.38 | -256 |

Notes:
- 678: BIDC: Additional time for Support Pilot 2, DR 1, and DR 2.

| ID | WBS | Task | Type | Duration | Start | Finish | Predecessors | Baseline start | Baseline finish | Total slack | Free slack | Constraint | Deadline |
| --- | --- | --- | --- | --- | --- | --- | --- | --- | --- | --- | --- | --- | --- |
| 684 | 1.3.14.3 | **GO-LIVE** |  | 34d | 2027-05-07 | 2027-06-20 |  | 2027-01-08 | 2027-01-25 | -371d | 0d |  | 2025-12-22 |
| 685 | 1.3.14.3.1 | Data Migration |  | 4d | 2027-05-07 | 2027-05-12 | 678 | 2027-01-12 | 2027-01-13 | -371d | 0d |  |  |
| 686 | 1.3.14.3.2 | Go /No-go Meeting | manual | 2d | 2027-06-07 | 2027-06-08 | 675, 685 | 2027-01-14 | 2027-01-14 |  |  |  |  |
| 687 | 1.3.14.3.3 | Quantum Go Live | milestone | 1d | 2027-06-19 | 2027-06-19 |  | 2027-01-15 | 2027-01-18 | -401d | 0d | start no earlier than 2027-06-19 |  |
| 688 | 1.3.14.3.4 | Go Live Milestone | milestone | 1d | 2027-06-20 | 2027-06-20 | 687 | 2027-01-25 | 2027-01-25 | -401d | 0d |  |  |
| 689 | 1.3.15 | **POST GO-LIVE SUPPORT** |  | 22d | 2027-06-20 | 2027-07-19 |  | 2027-01-26 | 2027-02-24 | 110d |  |  |  |
| 690 | 1.3.15.1 | Post go-live support |  | 22d | 2027-06-20 | 2027-07-19 | 687 | 2027-01-26 | 2027-02-24 | 110d |  |  |  |
| 691 | 1.3.16 | **CLOSE OUT** |  | 41d | 2027-06-21 | 2027-08-16 |  |  |  | 90d |  |  |  |
| 692 | 1.3.16.1 | Support Handover (Documentation of handover manual) |  | 5d | 2027-06-21 | 2027-06-25 | 688 |  |  | 126d |  |  |  |
| 693 | 1.3.16.2 | Client Project Review& Closeout |  | 20d | 2027-06-21 | 2027-07-16 | 688 |  |  | 90d | 0d |  |  |
| 694 | 1.3.16.3 | Close out finish |  | 1d | 2027-08-16 | 2027-08-16 | 693FS+20d |  |  | 90d |  |  |  |
